Schedule from MS Project, 2018-10-01 to 2022-04-29.
Aegerter & Bosshardt AG

## Calendars

- Standard: Mon-Fri 08:00-12:00, 13:00-17:00; Sat-Sun off. Exceptions (off unless hours are given): 2018-12-08 08:00-12:00, 13:00-17:00.

## Resources

| Resource |
| --- |
| 03.07.15 (+3 Monate) |
| 24.08.15 |
| 26.05. |
| PGV-Dauer |
| PGV-Dauer 12 Monate |
| 05.08. |
| 04.08 |
| 10.02.2018 |
| 10.02. |
| 09.02.18 |
| 29.03.19 |
| (LB) |
| Sab |
| Uar |
| Uat |

## Schedule

| ID | WBS | Task | Type | Duration | Start | Finish | Predecessors | Total slack | Free slack | Constraint | Text1 | Text2 | Text3 | Text4 | Text22 |
| --- | --- | --- | --- | --- | --- | --- | --- | --- | --- | --- | --- | --- | --- | --- | --- |
| 1 | 1 | Projektstart IG |  | 1d | 2018-10-01 | 2018-10-01 |  | 934.5d |  | start no earlier than 2018-10-01 |  |  |  |  |  |
| 3 | 2 | Grundlagenverifikation |  | 14.1w | 2018-10-01 | 2019-01-04 |  | 865d |  | start no earlier than 2018-10-01 |  |  |  |  |  |
| 4 | 3 | erg. GL-Beschaffung Archive ASTRA/NSNW |  | 16w | 2018-12-10 | 2019-03-29 |  | 804.5d |  | start no earlier than 2018-12-10 |  |  |  |  |  |
| 5 | 4 | Vervollständigen Grundlagen (Bauwerkskizzen etc) |  | 12w | 2019-02-01 | 2019-04-25 |  | 785.5d |  | start no earlier than 2019-02-01 |  |  |  |  |  |
| 6 | 5 | Plangrundlagen erarbeiten (u.a. IO-Plan) |  | 13w | 2018-12-03 | 2019-02-28 |  | 825.5d |  | start no earlier than 2018-12-03 |  |  |  |  |  |
| 7 | 6 | Perimeterdefinition in Situation |  | 1d | 2019-02-01 | 2019-02-01 |  | 844.5d |  | start no earlier than 2019-02-01 |  |  |  |  |  |
| 8 | 7 | Schnittstellen/Verantwortlichkeiten geklärt |  | 1d | 2019-02-01 | 2019-02-01 |  | 844.5d |  | start no earlier than 2019-02-01 |  |  |  |  |  |
| 9 | 8 | Einfluss aus Drittprojekten geklärt |  | 1d | 2019-03-01 | 2019-03-01 |  | 824.5d |  | start no earlier than 2019-03-01 |  |  |  |  |  |
| 10 | 9 | Vermessung: DTM, Orthophoto etc |  | 14w | 2019-04-29 | 2019-08-02 |  | 604.5d | 20d | start no earlier than 2019-04-29 |  |  |  |  |  |
| 11 | 10 | Lärm: Prüfen Erforderlichkeit AP |  | 13w | 2019-06-03 | 2019-08-30 |  | 694.5d |  | start no earlier than 2019-06-03 |  |  |  |  |  |
| 13 | 11 | Stat. Triage |  | 9w | 2018-12-03 | 2019-01-31 |  | 824.5d | 10d | start no earlier than 2018-12-03 |  |  |  |  |  |
| 14 | 12 | Entwässerung/Einzugsgebiete |  | 13w | 2019-01-02 | 2019-04-02 |  | 802.5d |  | start no earlier than 2019-01-02 |  |  |  |  |  |
| 16 | 13 | HI inkl Auswertung (ausstehende Obj./Programm 2019) |  | 4w | 2019-03-01 | 2019-03-28 |  | 805.5d |  | start no earlier than 2019-03-01 |  |  |  |  |  |
| 17 | 14 | Spülung Entwässerungsleitungen |  | 4w | 2019-05-02 | 2019-05-29 |  | 761.5d |  | start no earlier than 2019-05-02 |  |  |  |  |  |
| 18 | 15 | **Ergänzende Zustandserfassung** |  | 121d | 2018-10-01 | 2019-03-15 |  |  |  |  |  |  |  |  |  |
| 19 | 15.1 | Kanal-TV | manual | 33d | 2019-01-02 | 2019-02-15 |  |  |  |  | Sub | Unt | PrV | Erf | Ausw |
| 20 | 15.2 | Belag/Fundation | manual | 22d | 2019-01-02 | 2019-01-31 |  |  |  |  | Sub | Unt | PrV | Erf | Ausw |
| 21 | 15.3 | Kunstbauten | manual | 21d | 2019-02-15 | 2019-03-15 | 13 |  |  |  | Sub | Unt | Prv | Erf | Ausw |
| 22 | 15.4 | SM | manual | 21d | 2019-02-15 | 2019-03-15 |  |  |  |  | Sub | Unt | Prv | Erf | Ausw |
| 23 | 15.5 | LSW | manual | 21d | 2019-02-15 | 2019-03-15 |  |  |  |  | Sub | Unt | Prv | Erf | Ausw |
| 24 | 15.6 | Permanente Anker |  | 8w | 2019-05-06 | 2019-06-28 |  | 739.5d |  | start no earlier than 2019-05-06 |  |  |  |  |  |
| 25 | 16 | **Erhaltungskonzept EK** |  | 471d | 2019-03-01 | 2020-12-18 |  | 327d |  |  |  |  |  |  |  |
| 26 | 16.1 | Konzept Entwässerung/SABA |  | 13.2w | 2019-03-01 | 2019-05-31 |  | 758.5d | 10d | finish no earlier than 2019-05-31 |  |  |  |  |  |
| 27 | 16.2 | Installationskonzept |  | 13.2w | 2019-03-01 | 2019-05-31 |  | 758.5d | 10d | start no earlier than 2019-03-01 |  |  |  |  |  |
| 28 | 16.3 | AP'(e) SABA/Installationen/Lärm ja/nein |  | 1d | 2019-06-17 | 2019-06-17 | 26, 27 | 748.5d |  | start no earlier than 2019-06-17 |  |  | SABA/Install. |  | Lärm |
| 29 | 16.4 | Grundsatzentscheide |  | 15w | 2019-05-20 | 2019-08-30 |  | 584.5d | 0d | start no earlier than 2019-05-20 |  |  |  |  |  |
| 30 | 16.5 | Engineering/Konzeptentscheide |  | 110d | 2019-09-02 | 2020-01-31 | 10, 29 | 584.5d |  | start no earlier than 2019-09-02 |  |  |  |  |  |
| 31 | 16.6 | Dossiererstellung |  | 86d | 2020-01-02 | 2020-04-30 |  | 520.5d |  | finish no earlier than 2020-04-30 |  |  |  |  |  |
| 32 | 16.7 | Synthesedossier |  | 20d | 2020-05-04 | 2020-05-29 |  | 499.5d |  | finish no earlier than 2020-05-29 |  |  |  |  |  |
| 33 | 16.8 | Vernehmlassung |  | 13.2w | 2020-06-01 | 2020-08-31 |  | 1d |  | finish no earlier than 2020-08-31 |  |  |  |  |  |
| 34 | 16.9 | Überarbeitung |  | 44d | 2020-09-01 | 2020-10-30 |  | 389.5d |  | finish no earlier than 2020-10-30 |  |  |  |  |  |
| 35 | 16.10 | Genehmigung |  | 7w | 2020-11-02 | 2020-12-18 |  | 354.5d |  | start no earlier than 2020-11-02 |  |  |  |  |  |
| 37 | 17 | Massnahmenkonzept |  | 86.5w | 2020-09-02 | 2022-04-29 | 33 | 0d |  | start no earlier than 2020-09-02 |  |  |  |  |  |

| ID | WBS | Task | Type | Duration | Start | Finish | Predecessors | Total slack | Constraint |
| --- | --- | --- | --- | --- | --- | --- | --- | --- | --- |
| 38 | 18 | **Ausführungsprojekt AP Lärm (evtl. / nur Fall SSF)** |  | 327d | 2019-10-01 | 2020-12-30 |  |  |  |
| 39 | 18.1 | Engineering |  | 66d | 2019-10-01 | 2019-12-31 |  | 607.5d | finish no earlier than 2019-12-31 |
| 40 | 18.2 | Dossiererstellung |  | 21.4w | 2020-01-02 | 2020-05-29 |  | 499.5d | start no earlier than 2020-01-02 |
| 41 | 18.3 | Vernehmlassung |  | 13w | 2020-06-01 | 2020-08-28 |  | 434.5d | start no earlier than 2020-06-01 |
| 42 | 18.4 | Überarbeitung |  | 44d? | 2020-09-01 | 2020-10-30 |  | 389.5d | finish no earlier than 2020-10-30 |
| 43 | 18.5 | Techn. Genehmigung |  | 7w | 2020-11-02 | 2020-12-18 |  | 354.5d | start no earlier than 2020-11-02 |
| 44 | 18.6 | Abgabe AP an UVEK (sofern Auflage notwendig) | manual | 1d? | 2019-10-01 | 2019-10-01 |  |  |  |
| 45 | 19 | Ausführungsprojekt AP SABA |  | 86.5w | 2020-09-02 | 2022-04-29 | 33 | 0d | start no earlier than 2020-09-02 |
| 46 | 20 | Ausführungsprojekt AP Installationen |  | 86.5w | 2020-09-02 | 2022-04-29 | 33 | 0d | start no earlier than 2020-09-02 |
