Schedule from MS Project, 2018-10-01 to 2022-11-30.
Aegerter & Bosshardt AG

## Calendars

- Standard: Mon-Fri 08:00-12:00, 13:00-17:00; Sat-Sun off. Exceptions (off unless hours are given): 2018-12-08 08:00-12:00, 13:00-17:00.

## Resources

| Resource |
| --- |
| 03.07.15 (+3 Monate) |
| 24.08.15 |
| 26.05. |
| PGV-Dauer |
| PGV-Dauer 12 Monate |
| 05.08. |
| 04.08 |
| 10.02.2018 |
| 10.02. |
| 09.02.18 |
| 29.03.19 |
| (LB) |
| Sab |
| Uar |
| Uat |

## Schedule

| ID | WBS | Task | Type | Duration | Start | Finish | Predecessors | Total slack | Free slack | Constraint | Text3 | Text5 | Text22 | Text1 | Text2 | Text4 |
| --- | --- | --- | --- | --- | --- | --- | --- | --- | --- | --- | --- | --- | --- | --- | --- | --- |
| 1 | 1 | Projektstart IG |  | 1d | 2018-10-01 | 2018-10-01 |  | 934.5d |  | start no earlier than 2018-10-01 |  |  |  |  |  |  |
| 3 | 2 | Grundlagenverifikation |  | 14.1w | 2018-10-01 | 2019-01-04 |  | 865d |  | start no earlier than 2018-10-01 |  |  |  |  |  |  |
| 4 | 3 | erg. GL-Beschaffung Archive ASTRA/NSNW |  | 16w | 2018-12-10 | 2019-03-29 |  | 804.5d |  | start no earlier than 2018-12-10 |  |  |  |  |  |  |
| 5 | 4 | Aufarbeitung Archiv/Digitalisierung |  | 121d | 2019-04-01 | 2019-09-16 |  | 815.5d | 0d | start no earlier than 2019-04-01 |  |  |  |  |  |  |
| 6 | 5 | Vervollständigen Grundlagen (Bauwerkskizzen etc) |  | 8.4w | 2019-08-02 | 2019-09-30 |  | 782.5d |  | finish no earlier than 2019-09-30 |  |  |  |  |  |  |
| 7 | 6 | Plangrundlagen erarbeiten (u.a. IO-Plan) |  | 8.8w | 2019-10-01 | 2019-11-29 | 12 | 738.5d |  | finish no earlier than 2019-11-29 |  |  |  |  |  |  |
| 8 | 7 | Perimeterdefinition in Situation |  | 1d | 2019-04-12 | 2019-04-12 |  | 794.5d |  | start no earlier than 2019-04-12 |  |  |  |  |  |  |
| 9 | 8 | Schnittstellen/Verantwortlichkeiten geklärt |  | 1d | 2019-04-12 | 2019-04-12 |  | 794.5d |  | start no earlier than 2019-04-12 |  |  |  |  |  |  |
| 10 | 9 | Einfluss aus Drittprojekten geklärt |  | 1d | 2019-03-01 | 2019-03-01 |  | 977.5d |  | start no earlier than 2019-03-01 |  |  |  |  |  |  |
| 11 | 10 | Vermessung: Schachtprotokolle |  | 13.6w | 2019-04-29 | 2019-07-31 |  | 805.5d | 1d | start no earlier than 2019-04-29 |  |  |  |  |  |  |
| 12 | 11 | Vermessung: DTM, Aufnahmen |  | 22w | 2019-04-30 | 2019-09-30 |  | 782.5d | 0d | finish no earlier than 2019-09-30 |  |  |  |  |  |  |
| 13 | 12 | Lärm: Prüfen Erforderlichkeit AP |  | 17w | 2019-06-04 | 2019-09-30 |  | 782.5d |  | finish no earlier than 2019-09-30 |  |  |  |  |  |  |
| 14 | 13 | PV Umwelt/Akustiker/Verkehrsingenieur/Geologe |  | 130d | 2019-06-03 | 2019-11-29 |  | 738.5d |  | finish no earlier than 2019-11-29 |  |  |  |  |  |  |
| 15 | 14 | Stat. Triage |  | 7.1w | 2019-08-12 | 2019-09-30 |  | 783d |  | start no earlier than 2019-08-12 |  |  |  |  |  |  |
| 16 | 15 | Entwässerung/Einzugsgebiete/Grundlagen GIS-Entwässerung |  | 8.2w | 2019-08-05 | 2019-09-30 | 11 | 782.5d |  | start no earlier than 2019-08-05 | Übernahme | Plausibilität | Bearbeitung |  |  |  |
| 17 | 16 | HI inkl Auswertung (ausstehende Obj./Programm 2019) |  | 4w | 2019-03-01 | 2019-03-28 |  | 958.5d |  | start no earlier than 2019-03-01 |  |  |  |  |  |  |
| 18 | 17 | **Ergänzende Zustandserfassung** |  | 272d | 2018-10-01 | 2019-10-14 |  |  |  |  |  |  |  |  |  |  |
| 19 | 17.1 | Kanal-TV inkl. Spülen Entwässerungsleitungen * | manual | 43d | 2019-03-01 | 2019-04-30 |  |  |  | start no earlier than 2019-03-01 | PrV |  | Ausw | Sub | Unt | Erf |
| 20 | 17.2 | Belag/Fundation (*) | manual | 55d | 2019-04-01 | 2019-06-14 |  |  |  | start no earlier than 2019-04-01 | PrV |  | Ausw | Sub | Unt | Erf |
| 21 | 17.3 | Kunstbauten/SM/evtl./LSW | manual | 21d | 2019-09-16 | 2019-10-14 | 5 |  |  |  | Prv |  | Ausw | Sub | Unt | Erf |
| 22 | 17.4 | Fremdwassermessung (punktuell) * |  | 32d | 2019-05-02 | 2019-06-14 |  | 902.5d |  | start no earlier than 2019-05-02 |  |  |  |  |  |  |
| 23 | 17.5 | Fremdwassermessung (Langzeit) (*) | manual | 45d | 2019-04-01 | 2019-05-31 |  |  |  |  | Prv |  | Ausw | Sub | Unt | Erf |
| 24 | 17.6 | BSA: Schachtaufnahmen, Ausrüstungsgrad * | manual | 22d | 2019-05-02 | 2019-05-31 |  |  |  |  | Prv |  | Ausw | Sub | Unt | Erf |
| 25 | 17.7 | Permanente Anker |  | 13w | 2019-05-02 | 2019-07-31 |  | 869.5d |  | start no earlier than 2019-05-02 |  |  |  |  |  |  |

| ID | WBS | Task | Type | Duration | Start | Finish | Predecessors | Total slack | Constraint | Text2 | Text3 | Text22 |
| --- | --- | --- | --- | --- | --- | --- | --- | --- | --- | --- | --- | --- |
| 26 | 18 | **Erhaltungskonzept EK** |  | 521d | 2019-08-02 | 2021-07-31 |  | 326d |  |  |  |  |
| 27 | 18.1 | Konzept Entwässerung/SABA/Hydraul. Prüfung Anpassung Entwässerung - SABA |  | 4.4w | 2019-10-01 | 2019-10-30 | 16, 11 | 804.5d | finish no earlier than 2019-10-30 | Struktur | Hydraulik | Varianten/SABA |
| 28 | 18.2 | Installationskonzept |  | 13.2w | 2019-08-02 | 2019-11-01 |  | 802.5d | start no earlier than 2019-08-02 |  |  |  |
| 29 | 18.3 | AP'(e) SABA/Installationen/Lärm ja/nein |  | 1d | 2019-11-29 | 2019-11-29 |  | 782.5d | start no earlier than 2019-11-29 |  | Install/Lärm | SABA |
| 30 | 18.4 | Grundsatzentscheide |  | 12w | 2019-10-09 | 2019-12-31 |  | 760.5d | finish no earlier than 2019-12-31 |  |  |  |
| 31 | 18.5 | Engineering/Konzeptentscheide |  | 175d | 2019-12-02 | 2020-07-31 |  | 607.5d | start no earlier than 2019-12-01 |  |  |  |
| 32 | 18.6 | Dossiererstellung |  | 152d | 2020-05-01 | 2020-11-30 |  | 521.5d | finish no earlier than 2020-11-30 |  |  |  |
| 33 | 18.7 | Synthesedossier |  | 44d | 2020-11-02 | 2020-12-31 |  | 0d | start no earlier than 2020-11-02 |  |  |  |
| 34 | 18.8 | Vernehmlassung |  | 13.2w | 2021-01-01 | 2021-04-02 | 33 | 0d |  |  |  |  |
| 35 | 18.9 | Überarbeitung |  | 44d | 2021-04-01 | 2021-06-01 |  | 390.5d | start no earlier than 2021-04-01 |  |  |  |
| 36 | 18.10 | Genehmigung |  | 8.8w | 2021-06-01 | 2021-07-31 |  | 347.5d | finish no earlier than 2021-07-31 |  |  |  |
| 37 | 19 | Massnahmenkonzept |  | 86.5w | 2021-04-05 | 2022-11-30 | 34 | 0d | start no earlier than 2020-09-02 |  |  |  |
| 38 | 20 | **Ausführungsprojekt AP Lärm (evtl. / nur Fall SSF)** |  | 427d | 2019-10-01 | 2021-05-19 |  |  |  |  |  |  |
| 39 | 20.1 | Engineering |  | 110d | 2020-03-02 | 2020-07-31 |  | 607.5d | finish no earlier than 2020-07-31 |  |  |  |
| 40 | 20.2 | Dossiererstellung |  | 17.2w | 2020-08-03 | 2020-11-30 |  | 521.5d | finish no earlier than 2020-11-30 |  |  |  |
| 41 | 20.3 | Vernehmlassung |  | 13w | 2021-01-01 | 2021-04-01 |  | 433.5d | start no earlier than 2021-01-01 |  |  |  |
| 42 | 20.4 | Überarbeitung |  | 43d | 2021-04-01 | 2021-05-31 |  | 391.5d | start no earlier than 2021-04-01 |  |  |  |
| 43 | 20.5 | Techn. Genehmigung |  | 8.8w | 2021-06-01 | 2021-07-31 |  | 347.5d | finish no earlier than 2021-07-31 |  |  |  |
| 44 | 20.6 | Abgabe AP an UVEK (sofern Auflage notwendig) | manual | 1d? | 2019-10-01 | 2019-10-01 |  |  |  |  |  |  |
| 45 | 21 | Ausführungsprojekt AP SABA |  | 86.5w | 2021-04-05 | 2022-11-30 | 34 | 0d | start no earlier than 2020-09-02 |  |  |  |
| 46 | 22 | Ausführungsprojekt AP Installationen |  | 86.5w | 2021-04-05 | 2022-11-30 | 34 | 0d | start no earlier than 2020-09-02 |  |  |  |
