Schedule from MS Project, 2018-10-01 to 2022-11-24.
Aegerter & Bosshardt AG

## Calendars

- Standard: Mon-Fri 08:00-12:00, 13:00-17:00; Sat-Sun off. Exceptions (off unless hours are given): 2018-12-08 08:00-12:00, 13:00-17:00.

## Resources

| Resource |
| --- |
| 03.07.15 (+3 Monate) |
| 24.08.15 |
| 26.05. |
| PGV-Dauer |
| PGV-Dauer 12 Monate |
| 05.08. |
| 04.08 |
| 10.02.2018 |
| 10.02. |
| 09.02.18 |
| 29.03.19 |
| (LB) |
| Sab |
| Uar |
| Uat |

## Schedule

| ID | WBS | Task | Type | Duration | Start | Finish | Predecessors | Total slack | Free slack | Constraint | Text1 | Text2 | Text3 | Text4 | Text22 | Text5 |
| --- | --- | --- | --- | --- | --- | --- | --- | --- | --- | --- | --- | --- | --- | --- | --- | --- |
| 1 | 1 | Projektstart IG |  | 1d | 2018-10-01 | 2018-10-01 |  | 934.5d |  | start no earlier than 2018-10-01 |  |  |  |  |  |  |
| 3 | 2 | Grundlagenverifikation |  | 14.1w | 2018-10-01 | 2019-01-04 |  | 865d |  | start no earlier than 2018-10-01 |  |  |  |  |  |  |
| 4 | 3 | erg. GL-Beschaffung Archive ASTRA/NSNW |  | 16w | 2018-12-10 | 2019-03-29 |  | 804.5d |  | start no earlier than 2018-12-10 |  |  |  |  |  |  |
| 5 | 4 | Aufarbeitung Archiv/Digitalisierung |  | 154d | 2019-04-01 | 2019-10-31 |  | 868.5d |  | start no earlier than 2019-04-01 |  |  |  |  |  |  |
| 6 | 5 | Vervollständigen Grundlagen (Bauwerkskizzen etc) |  | 8.4w | 2019-08-02 | 2019-09-30 |  | 782.5d |  | finish no earlier than 2019-09-30 |  |  |  |  |  |  |
| 7 | 6 | Plangrundlagen erarbeiten (u.a. IO-Plan) |  | 8.8w | 2019-10-01 | 2019-11-29 | 12 | 738.5d |  | finish no earlier than 2019-11-29 |  |  |  |  |  |  |
| 8 | 7 | Perimeterdefinition in Situation |  | 1d | 2019-04-12 | 2019-04-12 |  | 794.5d |  | start no earlier than 2019-04-12 |  |  |  |  |  |  |
| 9 | 8 | Schnittstellen/Verantwortlichkeiten geklärt |  | 1d | 2019-04-12 | 2019-04-12 |  | 794.5d |  | start no earlier than 2019-04-12 |  |  |  |  |  |  |
| 10 | 9 | Einfluss aus Drittprojekten geklärt |  | 1d | 2019-03-01 | 2019-03-01 |  | 977.5d |  | start no earlier than 2019-03-01 |  |  |  |  |  |  |
| 11 | 10 | Vermessung: Schachtprotokolle |  | 13.6w | 2019-04-29 | 2019-07-31 |  | 805.5d | 1d | start no earlier than 2019-04-29 |  |  |  |  |  |  |
| 12 | 11 | Vermessung: DTM, Aufnahmen |  | 22w | 2019-04-30 | 2019-09-30 |  | 782.5d | 0d | finish no earlier than 2019-09-30 |  |  |  |  |  |  |
| 13 | 12 | Lärm: Prüfen Erforderlichkeit AP |  | 17w | 2019-06-04 | 2019-09-30 |  | 782.5d |  | finish no earlier than 2019-09-30 |  |  |  |  |  |  |
| 14 | 13 | PV Umwelt/Akustiker/Verkehrsingenieur/Geologe |  | 130d | 2019-06-03 | 2019-11-29 |  | 738.5d |  | finish no earlier than 2019-11-29 |  |  |  |  |  |  |
| 15 | 14 | HI inkl Auswertung (ausstehende Obj./Programm 2019) |  | 4w | 2019-03-01 | 2019-03-28 |  | 1023.5d |  | start no earlier than 2019-03-01 |  |  |  |  |  |  |
| 16 | 15 | **Ergänzende Zustandserfassung** |  | 272d | 2018-10-01 | 2019-10-14 |  |  |  |  |  |  |  |  |  |  |
| 17 | 15.1 | Kanal-TV inkl. Spülen Entwässerungsleitungen * | manual | 43d | 2019-03-01 | 2019-04-30 |  |  |  | start no earlier than 2019-03-01 | Sub | Unt | PrV | Erf | Ausw |  |
| 18 | 15.2 | Belag/Fundation (*) | manual | 55d | 2019-04-01 | 2019-06-14 |  |  |  | start no earlier than 2019-04-01 | Sub | Unt | PrV | Erf | Ausw |  |
| 19 | 15.3 | Kunstbauten/SM/evtl./LSW | manual | 22d | 2020-01-02 | 2020-01-31 |  |  |  |  | Sub | Unt | Prv | Erf | Ausw |  |
| 20 | 15.4 | Fremdwassermessung (punktuell) * |  | 21d | 2019-08-02 | 2019-08-30 |  | 912.5d |  | finish no earlier than 2019-08-30 |  |  | nass | trocken | Ausw |  |
| 21 | 15.5 | Fremdwassermessung (Langzeit) (*) | manual | 44d | 2020-03-02 | 2020-04-30 |  |  |  |  | Sub | Unt | Prv | Erf | Ausw |  |
| 22 | 15.6 | BSA: Schachtaufnahmen, Ausrüstungsgrad * | manual | 22d | 2019-05-02 | 2019-05-31 |  |  |  |  | Sub | Unt | Prv | Erf | Ausw | Weitere Aufnahm./Schächte |
| 23 | 15.7 | Permanente Anker |  | 13w | 2019-07-01 | 2019-09-27 |  | 892.5d |  | start no earlier than 2019-07-01 |  |  |  |  |  |  |
| 24 | 16 | **Erhaltungskonzept EK** |  | 520d | 2019-08-05 | 2021-07-30 |  | 85d |  |  |  |  |  |  |  |  |
| 25 | 16.1 | SABA Konzept übergeordnet |  | 9w | 2019-12-16 | 2020-02-14 | 28, 11 | 792.5d |  | finish no earlier than 2020-02-14 |  |  |  |  |  |  |
| 26 | 16.2 | Installationskonzept |  | 13w | 2019-12-02 | 2020-02-28 |  | 782.5d |  | finish no earlier than 2020-02-28 |  |  |  |  |  |  |
| 27 | 16.3 | AP'(e) SABA/Installationen/Lärm ja/nein |  | 1d | 2020-02-14 | 2020-02-14 | 29FF | 723.5d |  | start no earlier than 2020-02-03 |  |  | Install/Lärm |  | SABA |  |
| 28 | 16.4 | Entwässerung/Einzugsgebiete/Grundlagen GIS-Entwässerung |  | 17w | 2019-08-05 | 2019-11-29 | 11 | 802.5d | 10d | finish no earlier than 2019-11-29 |  |  | Übernahme |  | Bearbeitung | Plausibilität |
| 29 | 16.5 | Grundsatzentscheide |  | 6w | 2020-01-06 | 2020-02-14 |  | 792.5d |  | finish no earlier than 2020-02-14 |  |  |  |  |  |  |
| 30 | 16.6 | Stat. Triage (K + SM) |  | 4w | 2019-11-04 | 2019-11-29 |  | 847.5d |  | finish no earlier than 2019-11-29 |  |  |  |  |  |  |
| 31 | 16.7 | stat. Überprüfung K + SM | manual | 65d | 2019-12-02 | 2020-02-28 |  |  |  |  |  |  |  |  |  |  |
| 32 | 16.8 | Engineering/Konzeptentscheide |  | 153d | 2020-03-02 | 2020-09-30 |  | 560.5d |  | finish no earlier than 2020-09-30 |  |  |  |  |  |  |
| 33 | 16.9 | Dossiererstellung |  | 120d | 2020-06-01 | 2020-11-13 |  | 528.5d |  | finish no earlier than 2020-11-13 |  |  |  |  |  |  |
| 34 | 16.10 | Synthesedossier |  | 39d | 2020-11-02 | 2020-12-24 |  | 1d |  | finish no earlier than 2020-12-24 |  |  |  |  |  |  |
| 35 | 16.11 | Vernehmlassung |  | 13.2w | 2020-12-28 | 2021-03-29 | 34 | 0d |  | start no earlier than 2020-12-28 |  |  |  |  |  |  |
| 36 | 16.12 | Überarbeitung |  | 44d | 2021-04-01 | 2021-06-01 |  | 386.5d |  | start no earlier than 2021-04-01 |  |  |  |  |  |  |
| 37 | 16.13 | Genehmigung |  | 8.8w | 2021-06-01 | 2021-07-30 |  | 343.5d |  | finish no earlier than 2021-07-30 |  |  |  |  |  |  |
| 38 | 17 | Massnahmenkonzept |  | 86.5w | 2021-03-30 | 2022-11-24 | 35 | 0d |  | start no earlier than 2020-09-02 |  |  |  |  |  |  |

| ID | WBS | Task | Type | Duration | Start | Finish | Predecessors | Total slack | Constraint |
| --- | --- | --- | --- | --- | --- | --- | --- | --- | --- |
| 39 | 18 | **Ausführungsprojekt AP Lärm (evtl. / nur Fall SSF)** |  | 427d | 2019-10-01 | 2021-05-19 |  |  |  |
| 40 | 18.1 | Engineering |  | 108d | 2020-05-04 | 2020-09-30 |  | 560.5d | finish no earlier than 2020-09-30 |
| 41 | 18.2 | Dossiererstellung |  | 17.6w | 2020-09-01 | 2020-12-31 |  | 494.5d | finish no earlier than 2020-12-31 |
| 42 | 18.3 | Vernehmlassung |  | 13w | 2021-04-01 | 2021-06-30 |  | 434.5d | start no earlier than 2021-04-01 |
| 43 | 18.4 | Überarbeitung |  | 43d | 2021-04-01 | 2021-05-31 |  | 387.5d | start no earlier than 2021-04-01 |
| 44 | 18.5 | Techn. Genehmigung |  | 8.8w | 2021-06-01 | 2021-07-30 |  | 343.5d | finish no earlier than 2021-07-30 |
| 45 | 18.6 | Abgabe AP an UVEK (sofern Auflage notwendig) | manual | 1d? | 2019-10-01 | 2019-10-01 |  |  |  |
| 46 | 19 | Ausführungsprojekt AP SABA |  | 86.5w | 2021-03-30 | 2022-11-24 | 35 | 0d | start no earlier than 2020-09-02 |
| 47 | 20 | Ausführungsprojekt AP Installationen |  | 86.5w | 2021-03-30 | 2022-11-24 | 35 | 0d | start no earlier than 2020-09-02 |
