# Terminprogramm

Schedule from MS Project, 2018-10-01 to 2022-03-04, status date 2019-10-16.
Planung / Realisierung
Aegerter & Bosshardt AG

## Calendars

- Standard: Mon-Fri 08:00-12:00, 13:00-17:00; Sat-Sun off. Exceptions (off unless hours are given): 2018-10-13 08:00-12:00, 13:00-17:00, 2019-10-26 08:00-12:00, 13:00-17:00.

## Resources

| Resource |
| --- |
| TBA-H / -V |
| AeBo |
| Unt. |
| TBA-V |
| Kanton BS |
| AeBo+AUE+Eigent. |
| AUE |
| Eigent. |
| Eigentümer |
| AUE/AeBo |
| AUE, PL, U |
| SUBB |
| TBA, PL, U |
| TBA |
| TBA, PL, U-Inliner |
| U-Inliner |
| U-Baumeister |
| RR |
| TBA, PL, U-Inliner, etc. |
| PV |
| AeBo, TBA |
| Baumeister |
| Unternehmer |
| alle |
| ARGE KS |
| UN-Neubau |
| HBA, PV |
| UN |
| UN-Sanitär |
| UN-Inliner |
| HBA |
| UN-Baumeister |
| Ex team |
| Bauphase 1 |
| Bauphase 2 |
| Bauphase 3 |
| Bauphase 4 |
| Bauphase 5 |
| Bauphase 6 |
| Bauphase 7 |
| XXXXXXXXX |
| ASTRA / GE |
| ASTRA |
| PV / ASTRA |
| UUN |
| 10 |

## Schedule

| ID | WBS | Task | Type | Duration | Start | Finish | Predecessors | Total slack | Free slack | Constraint |
| --- | --- | --- | --- | --- | --- | --- | --- | --- | --- | --- |
| 1 | 1 | Projektstart IG | milestone, manual | 1d | 2018-10-01 | 2018-10-01 |  |  |  |  |
| 3 | 2 | **Grundlagen** |  | 352d | 2018-10-01 | 2020-01-31 |  | 545d |  |  |
| 4 | 2.1 | Grundlagenverifikation |  | 71d | 2018-10-01 | 2019-01-04 |  | 781d |  | start no earlier than 2018-10-01 |
| 5 | 2.2 | erg. GL-Beschaffung Archive ASTRA/NSNW |  | 80d | 2018-12-10 | 2019-03-29 |  | 565d | 0d | start no earlier than 2018-12-10 |
| 6 | 2.3 | Aufarbeitung Archiv/Digitalisierung |  | 156d | 2019-04-01 | 2019-11-01 | 5 | 565d |  |  |
| 7 | 2.4 | Vervollständigen Grundlagen (Bauwerkskizzen etc) |  | 40d | 2019-08-05 | 2019-09-27 |  | 591d |  | start no earlier than 2019-08-05 |
| 8 | 2.5 | Plangrundlagen erarbeiten (u.a. IO-Plan) |  | 156d | 2019-07-01 | 2020-01-31 |  | 500d |  | start no earlier than 2019-07-01 |
| 9 | 2.6 | Perimeterdefinition in Situation | milestone | 1d | 2019-04-12 | 2019-04-12 |  | 711d |  | start no earlier than 2019-04-12 |
| 10 | 2.7 | Schnittstellen/Verantwortlichkeiten geklärt | milestone | 1d | 2019-04-12 | 2019-04-12 |  | 711d |  | start no earlier than 2019-04-12 |
| 11 | 2.8 | Einfluss aus Drittprojekten geklärt | milestone | 1d | 2019-03-01 | 2019-03-01 |  | 741d |  | start no earlier than 2019-03-01 |
| 12 | 3 | **Dritte** |  | 416d | 2019-04-29 | 2020-11-27 |  | 330d |  |  |
| 13 | 3.1 | Vermessung: Schachtprotokolle |  | 68d | 2019-04-29 | 2019-07-31 |  | 633d |  | start no earlier than 2019-04-29 |
| 14 | 3.2 | Vermessung: DTM, Aufnahmen |  | 110d | 2019-04-29 | 2019-09-27 |  | 591d |  | start no earlier than 2019-04-29 |
| 15 | 3.3 | Lärm: Prüfen Erforderlichkeit AP |  | 85d | 2019-06-03 | 2019-09-27 |  | 591d |  | start no earlier than 2019-06-03 |
| 16 | 3.4 | PV Umwelt/Akustiker/Verkehrsingenieur/Geologe Grundlagen |  | 196d | 2019-08-05 | 2020-05-01 |  | 480d |  | start no earlier than 2019-08-05 |
| 17 | 3.5 | PV Akustik (AP LS) |  | 110d | 2020-04-27 | 2020-09-25 |  | 375d |  | start no earlier than 2020-04-27 |
| 18 | 3.6 | PV Umwelt (UWN, Etc.) |  | 85d | 2020-08-03 | 2020-11-27 |  | 330d |  | start no earlier than 2020-08-03 |
| 19 | 4 | **Ergänzende Zustandserfassung** |  | 411d | 2019-03-04 | 2020-09-25 |  | 375d |  |  |
| 20 | 4.1 | HI inkl. Auswertung (ausstehende Obj./Programm 2019) |  | 150d | 2019-03-04 | 2019-09-27 |  | 636d |  | start no earlier than 2019-03-04 |
| 21 | 4.2 | Kanal-TV inkl. Spülen Entwässerungsleitungen * |  | 291d | 2019-03-04 | 2020-04-10 |  | 495d |  | start no earlier than 2019-03-04 |
| 22 | 4.3 | Belag/Fundation (*) |  | 130d | 2019-04-01 | 2019-09-27 |  | 636d |  | start no earlier than 2019-04-01 |
| 23 | 4.4 | **Kunstbauten/Stützmauern** |  | 301d | 2019-08-05 | 2020-09-25 |  | 375d |  |  |
| 24 | 4.4.1 | Erstellung Konzept inkl. Kostenschätzung |  | 75d | 2019-12-02 | 2020-03-13 |  | 515d |  | start no earlier than 2019-12-02 |
| 25 | 4.4.2 | Erstellung Unterlagen |  | 34d | 2020-03-16 | 2020-04-30 |  | 481d |  | start no earlier than 2020-03-16 |
| 26 | 4.4.3 | Submission |  | 15d | 2020-05-04 | 2020-05-22 |  | 465d |  | start no earlier than 2020-05-04 |
| 27 | 4.4.4 | Vergabeantrag IG |  | 10d | 2020-05-25 | 2020-06-05 |  | 455d |  | start no earlier than 2020-05-25 |
| 28 | 4.4.5 | Vergabe ASTRA |  | 15d | 2020-06-08 | 2020-06-26 |  | 440d |  | start no earlier than 2020-06-08 |
| 29 | 4.4.6 | Erfassung |  | 25d | 2020-07-06 | 2020-08-07 |  | 410d |  | start no earlier than 2020-07-06 |
| 30 | 4.4.7 | Auswertung |  | 20d | 2020-08-31 | 2020-09-25 |  | 375d |  | start no earlier than 2020-08-31 |
| 31 | 4.4.8 | Fremdwassermessung (punktuell) |  | 20d | 2019-08-05 | 2019-08-30 |  | 656d |  | start no earlier than 2019-08-05 |
| 32 | 4.4.9 | BSA: Schachtaufnahmen, Ausrüstungsgrad |  | 121d | 2019-10-14 | 2020-03-27 |  | 505d |  | start no earlier than 2019-10-14 |

| ID | WBS | Task | Type | Duration | Start | Finish | Predecessors | Total slack | Constraint |
| --- | --- | --- | --- | --- | --- | --- | --- | --- | --- |
| 33 | 5 | **Grundlage Erhaltungskonzept EK** |  | 266d | 2019-07-01 | 2020-07-03 |  | 435d |  |
| 34 | 5.1 | Grundlagen GIS-basierte Entwässerungsplanung |  | 131d | 2019-07-01 | 2019-12-27 |  | 570d | start no earlier than 2019-07-01 |
| 35 | 5.2 | Übergeordnetes SABA-Konzept V 0.1 |  | 85d | 2019-12-02 | 2020-03-27 |  | 505d | start no earlier than 2019-12-01 |
| 36 | 5.3 | EP Rh-Fr SABA-Konzept V 1.0 |  | 70d | 2020-03-30 | 2020-07-03 |  | 435d | start no earlier than 2020-03-30 |
| 37 | 5.4 | Entscheid | milestone | 1d | 2020-03-27 | 2020-03-27 |  | 505d | start no earlier than 2020-03-27 |
| 38 | 5.5 | Grundsatzentscheide |  | 75d | 2020-01-06 | 2020-04-17 |  | 490d | start no earlier than 2020-01-06 |
| 39 | 5.6 | Entscheid | milestone | 1d | 2020-04-30 | 2020-04-30 |  | 481d | start no earlier than 2020-04-30 |
| 40 | 5.7 | Entscheide AP ja/nein herbeiführen |  | 105d | 2019-11-04 | 2020-03-27 |  | 505d | start no earlier than 2019-11-04 |
| 41 | 5.8 | Entscheide AP Lärm, Installationen, Landerwerb ja/nein | milestone | 1d | 2020-04-30 | 2020-04-30 |  | 481d | start no earlier than 2020-04-30 |
| 42 | 6 | **Massnahmenkonzept** |  | 610d | 2019-11-04 | 2022-03-04 |  | 0d |  |
| 43 | 6.1 | T-U: Normalprofil/Normprüfung/Abschnittseinteilung |  | 88d | 2020-01-01 | 2020-05-01 |  | 480d | start no earlier than 2020-01-01 |
| 44 | 6.2 | T-U: Hydraulische Prüfung / Entwässerungskonzept |  | 70d | 2020-03-30 | 2020-07-03 |  | 435d | start no earlier than 2020-03-30 |
| 45 | 6.3 | Alle FB: Konzepte (Faktenblätter) |  | 110d | 2020-03-30 | 2020-08-28 |  | 395d | start no earlier than 2020-03-30 |
| 46 | 6.4 | K, T-G: Nutzungsvereinbarungen |  | 45d | 2020-03-30 | 2020-05-29 |  | 460d | start no earlier than 2020-03-30 |
| 47 | 6.5 | K, T-G: Stat. Triage |  | 150d | 2019-11-04 | 2020-05-29 |  | 460d | start no earlier than 2019-11-04 |
| 48 | 6.6 | K, T-G: PB/Stat. Überprüfung |  | 110d | 2020-05-04 | 2020-10-02 |  | 370d | start no earlier than 2020-05-04 |
| 49 | 6.7 | Alle FB: Massnahmen, Termine, Kosten |  | 155d | 2020-06-29 | 2021-01-29 |  | 285d | start no earlier than 2020-06-29 |
| 50 | 6.8 | Bauablauf/temp. Verkehrsführung |  | 65d | 2020-08-31 | 2020-11-27 |  | 330d | start no earlier than 2020-08-31 |
| 51 | 6.9 | Erstellung Fachdossiers Bau + BSA V0.1 |  | 150d | 2020-11-02 | 2021-05-28 |  | 200d | start no earlier than 2020-11-02 |
| 52 | 6.10 | Abgleich mit Dritten |  | 150d | 2020-11-02 | 2021-05-28 |  | 200d | start no earlier than 2020-11-02 |
| 53 | 6.11 | Erstellung Synthesedossier V0.1 |  | 90d | 2021-03-29 | 2021-07-30 |  | 155d | start no earlier than 2021-03-29 |
| 54 | 6.12 | Vernehmlassung |  | 65d | 2021-08-02 | 2021-10-29 |  | 90d | start no earlier than 2021-08-02 |
| 55 | 6.13 | Bereinigung |  | 45d | 2021-11-01 | 2021-12-31 | 54 | 45d | start no earlier than 2021-11-01 |
| 56 | 6.14 | Genehmigung |  | 45d | 2022-01-03 | 2022-03-04 | 55 | 0d | start no earlier than 2022-01-03 |

| ID | WBS | Task | Duration | Start | Finish | Predecessors | Total slack | Free slack | Constraint |
| --- | --- | --- | --- | --- | --- | --- | --- | --- | --- |
| 57 | 6.15 | **Ausführungsprojekt AP Lärm** | 480d | 2020-04-27 | 2022-02-25 |  | 5d |  |  |
| 58 | 6.15.1 | Konzepte (Faktenblätter) | 90d | 2020-04-27 | 2020-08-28 |  | 395d |  | start no earlier than 2020-04-27 |
| 59 | 6.15.2 | NV, PB | 45d | 2020-06-01 | 2020-07-31 |  | 415d |  | start no earlier than 2020-06-01 |
| 60 | 6.15.3 | Massnahmen, Kosten, Termine | 125d | 2020-06-29 | 2020-12-18 | 59 | 315d |  | start no earlier than 2020-06-29 |
| 61 | 6.15.4 | Erstellung Dossier | 130d | 2020-11-02 | 2021-04-30 |  | 220d |  | start no earlier than 2020-11-02 |
| 62 | 6.15.5 | Vernehmlassung | 65d | 2021-08-02 | 2021-10-29 |  | 90d |  | start no earlier than 2021-08-02 |
| 63 | 6.15.6 | Bereinigung | 45d | 2021-11-01 | 2021-12-31 |  | 45d |  | start no earlier than 2021-11-01 |
| 64 | 6.15.7 | Technische Genehmigung | 40d | 2022-01-03 | 2022-02-25 |  | 5d |  | start no earlier than 2022-01-03 |
| 65 | 6.16 | **Ausführungsprojekt AP SABA** | 425d | 2020-07-13 | 2022-02-25 |  | 5d |  |  |
| 66 | 6.16.1 | Konzepte (Faktenblätter) | 80d | 2020-07-13 | 2020-10-30 |  | 350d |  | start no earlier than 2020-07-13 |
| 67 | 6.16.2 | NV, PB | 25d | 2020-07-27 | 2020-08-28 |  | 245d | 0d | start no earlier than 2020-07-27 |
| 68 | 6.16.3 | Massnahmen, Kosten, Termine | 150d | 2020-08-31 | 2021-03-26 | 67 | 245d |  |  |
| 69 | 6.16.4 | Erstellung Dossier Bau + BSA V0.1 | 165d | 2020-12-07 | 2021-07-23 |  | 160d |  | start no earlier than 2020-12-07 |
| 70 | 6.16.5 | Vernehmlassung | 65d | 2021-08-02 | 2021-10-29 |  | 90d |  | start no earlier than 2021-08-02 |
| 71 | 6.16.6 | Bereinigung | 45d | 2021-11-01 | 2021-12-31 |  | 45d |  | start no earlier than 2021-11-01 |
| 72 | 6.16.7 | Technische Genehmigung | 40d | 2022-01-03 | 2022-02-25 |  | 5d |  | start no earlier than 2022-01-03 |
| 73 | 7 | Ausführungsprojekt AP Installationen (evtl.) | 480d | 2020-04-27 | 2022-02-25 |  | 5d |  |  |
