# Terminprogramm

Schedule from MS Project, 2018-10-01 to 2022-09-09, status date 2019-10-16.
Planung / Realisierung
Aegerter & Bosshardt AG

## Calendars

- Standard: Mon-Fri 08:00-12:00, 13:00-17:00; Sat-Sun off. Exceptions (off unless hours are given): 2018-10-13 08:00-12:00, 13:00-17:00, 2019-10-26 08:00-12:00, 13:00-17:00.

## Resources

| Resource |
| --- |
| TBA-H / -V |
| AeBo |
| Unt. |
| TBA-V |
| Kanton BS |
| AeBo+AUE+Eigent. |
| AUE |
| Eigent. |
| Eigentümer |
| AUE/AeBo |
| AUE, PL, U |
| SUBB |
| TBA, PL, U |
| TBA |
| TBA, PL, U-Inliner |
| U-Inliner |
| U-Baumeister |
| RR |
| TBA, PL, U-Inliner, etc. |
| PV |
| AeBo, TBA |
| Baumeister |
| Unternehmer |
| alle |
| ARGE KS |
| UN-Neubau |
| HBA, PV |
| UN |
| UN-Sanitär |
| UN-Inliner |
| HBA |
| UN-Baumeister |
| Ex team |
| Bauphase 1 |
| Bauphase 2 |
| Bauphase 3 |
| Bauphase 4 |
| Bauphase 5 |
| Bauphase 6 |
| Bauphase 7 |
| XXXXXXXXX |
| ASTRA / GE |
| ASTRA |
| PV / ASTRA |
| UUN |
| 10 |

## Schedule

| ID | WBS | Task | Type | Duration | Start | Finish | Predecessors | Total slack | Free slack | Constraint |
| --- | --- | --- | --- | --- | --- | --- | --- | --- | --- | --- |
| 1 | 1 | Projektstart IG | milestone, manual | 1d | 2018-10-01 | 2018-10-01 |  |  |  |  |
| 3 | 2 | **Grundlagen** |  | 352d | 2018-10-01 | 2020-01-31 |  | 680d |  |  |
| 4 | 2.1 | Grundlagenverifikation |  | 71d | 2018-10-01 | 2019-01-04 |  | 826d |  | start no earlier than 2018-10-01 |
| 5 | 2.2 | erg. GL-Beschaffung Archive ASTRA/NSNW |  | 80d | 2018-12-10 | 2019-03-29 |  | 610d | 0d | start no earlier than 2018-12-10 |
| 6 | 2.3 | Aufarbeitung Archiv/Digitalisierung |  | 156d | 2019-04-01 | 2019-11-01 | 5 | 610d |  |  |
| 7 | 2.4 | Vervollständigen Grundlagen (Bauwerkskizzen etc) |  | 40d | 2019-08-05 | 2019-09-27 |  | 636d |  | start no earlier than 2019-08-05 |
| 8 | 2.5 | Plangrundlagen erarbeiten (u.a. IO-Plan) |  | 156d | 2019-07-01 | 2020-01-31 |  | 545d |  | start no earlier than 2019-07-01 |
| 9 | 2.6 | Perimeterdefinition in Situation | milestone | 1d | 2019-04-12 | 2019-04-12 |  | 756d |  | start no earlier than 2019-04-12 |
| 10 | 2.7 | Schnittstellen/Verantwortlichkeiten geklärt | milestone | 1d | 2019-04-12 | 2019-04-12 |  | 756d |  | start no earlier than 2019-04-12 |
| 11 | 2.8 | Einfluss aus Drittprojekten geklärt | milestone | 1d | 2019-03-01 | 2019-03-01 |  | 786d |  | start no earlier than 2019-03-01 |
| 12 | 3 | **Dritte** |  | 501d | 2019-04-29 | 2021-03-26 |  | 380d |  |  |
| 13 | 3.1 | Vermessung: Schachtprotokolle |  | 68d | 2019-04-29 | 2019-07-31 |  | 678d |  | start no earlier than 2019-04-29 |
| 14 | 3.2 | Vermessung: DTM, Aufnahmen |  | 110d | 2019-04-29 | 2019-09-27 |  | 636d |  | start no earlier than 2019-04-29 |
| 15 | 3.3 | Lärm: Prüfen Erforderlichkeit AP |  | 85d | 2019-06-03 | 2019-09-27 |  | 636d |  | start no earlier than 2019-06-03 |
| 16 | 3.4 | PV Umwelt/Akustiker/Verkehrsingenieur/Geologe Grundlagen |  | 196d | 2019-08-05 | 2020-05-01 |  | 480d |  | start no earlier than 2019-08-05 |
| 17 | 3.5 | Entscheid AP Lärm ja/nein | milestone | 1d | 2020-05-01 | 2020-05-01 |  | 480d |  | start no earlier than 2020-05-01 |
| 18 | 3.6 | **PV Akustik (AP LS)** |  | 240d | 2020-04-27 | 2021-03-26 |  | 380d |  |  |
| 19 | 3.6.1 | Erstellung Dossier V 0.9 |  | 175d | 2020-04-27 | 2020-12-25 |  | 310d |  | start no earlier than 2020-04-27 |
| 20 | 3.6.2 | Prüfung, Bereinigung, Technische Genehmigung |  | 60d | 2021-01-04 | 2021-03-26 |  | 245d |  | start no earlier than 2021-01-04 |
| 21 | 3.7 | PV Umwelt (UWN, Etc.) |  | 85d | 2020-08-03 | 2020-11-27 |  | 330d |  | start no earlier than 2020-08-03 |
| 22 | 4 | **Ergänzende Zustandserfassung** |  | 431d | 2019-03-04 | 2020-10-23 |  | 490d |  |  |
| 23 | 4.1 | HI inkl. Auswertung (ausstehende Obj./Programm 2019) |  | 150d | 2019-03-04 | 2019-09-27 |  | 636d |  | start no earlier than 2019-03-04 |
| 24 | 4.2 | Kanal-TV inkl. Spülen Entwässerungsleitungen * |  | 291d | 2019-03-04 | 2020-04-10 |  | 495d |  | start no earlier than 2019-03-04 |
| 25 | 4.3 | Kanal-TV Bachdurchlässe |  | 130d | 2020-01-01 | 2020-06-30 |  | 438d |  | finish no earlier than 2020-06-30 |
| 26 | 4.4 | Belag/Fundation (*) |  | 130d | 2019-04-01 | 2019-09-27 |  | 636d |  | start no earlier than 2019-04-01 |

| ID | WBS | Task | Type | Duration | Start | Finish | Total slack | Constraint |
| --- | --- | --- | --- | --- | --- | --- | --- | --- |
| 27 | 4.5 | **Kunstbauten/Stützmauern** |  | 235d | 2019-12-02 | 2020-10-23 | 490d |  |
| 28 | 4.5.1 | Erstellung Konzept inkl. Kostenschätzung |  | 75d | 2019-12-02 | 2020-03-13 | 515d | start no earlier than 2019-12-02 |
| 29 | 4.5.2 | Erstellung Unterlagen |  | 34d | 2020-03-16 | 2020-04-30 | 481d | start no earlier than 2020-03-16 |
| 30 | 4.5.3 | Submission |  | 15d | 2020-05-04 | 2020-05-22 | 465d | start no earlier than 2020-05-04 |
| 31 | 4.5.4 | Vergabeantrag IG |  | 10d | 2020-05-25 | 2020-06-05 | 455d | start no earlier than 2020-05-25 |
| 32 | 4.5.5 | Vergabe ASTRA |  | 15d | 2020-06-08 | 2020-06-26 | 440d | start no earlier than 2020-06-08 |
| 33 | 4.5.6 | Erfassung |  | 55d | 2020-07-06 | 2020-09-18 | 380d | start no earlier than 2020-07-06 |
| 34 | 4.5.7 | Auswertung |  | 40d | 2020-08-31 | 2020-10-23 | 355d | start no earlier than 2020-08-31 |
| 35 | 4.5.8 | Überwachungsmessungen Stützmauern 2020 |  | 65d | 2020-05-04 | 2020-07-31 | 415d | finish no earlier than 2020-07-31 |
| 36 | 4.5.9 | Ergänzende visuelle Inspektionen 2020; Kanal-TV Bachdurchlässe |  | 65d | 2020-05-04 | 2020-07-31 | 415d | start no earlier than 2020-05-04 |
| 37 | 4.6 | Fremdwassermessung (punktuell) |  | 20d | 2019-10-16 | 2019-11-11 | 604d |  |
| 38 | 4.7 | BSA: Schachtaufnahmen, Ausrüstungsgrad |  | 121d | 2019-10-14 | 2020-03-27 | 505d | start no earlier than 2019-10-14 |
| 39 | 5 | **Grundlagen Erhaltungskonzept EK** |  | 326d | 2019-07-01 | 2020-09-25 | 510d |  |
| 40 | 5.1 | Grundlagen GIS-basierte Entwässerungsplanung |  | 131d | 2019-07-01 | 2019-12-27 | 570d | start no earlier than 2019-07-01 |
| 41 | 5.2 | Übergeordnetes SABA-Konzept V 0.1 |  | 130d | 2019-12-02 | 2020-05-29 | 460d | start no earlier than 2019-12-01 |
| 42 | 5.3 | Entscheid SABA-Konzept überg. | milestone | 1d | 2020-06-11 | 2020-06-11 | 451d | start no earlier than 2020-06-11 |
| 43 | 5.4 | EP Rh-Fr SABA-Konzept V 0.9 |  | 65d | 2020-06-15 | 2020-09-11 | 385d | start no earlier than 2020-06-15 |
| 44 | 5.5 | Projektentscheid SABA Rh-Fr | milestone | 1d | 2020-09-25 | 2020-09-25 | 375d | start no earlier than 2020-09-25 |
| 45 | 5.6 | Grundsatzentscheide |  | 65d | 2020-03-02 | 2020-05-29 | 460d | start no earlier than 2020-03-02 |
| 46 | 5.7 | Entscheid Grundsatzentscheide | milestone | 1d | 2020-06-18 | 2020-06-18 | 446d | start no earlier than 2020-06-18 |
| 47 | 6 | **Massnahmenkonzept** |  | 610d | 2019-11-04 | 2022-03-04 | 135d |  |
| 48 | 6.1 | T-U: Normalprofil/Normprüfung/Abschnittseinteilung |  | 88d | 2020-01-01 | 2020-05-01 | 480d | start no earlier than 2020-01-01 |
| 49 | 6.2 | T-U: Belagskonzept |  | 80d | 2020-04-13 | 2020-07-31 | 415d | start no earlier than 2020-04-13 |
| 50 | 6.3 | T-U: Hydraulische Prüfung / Entwässerungskonzept |  | 90d | 2020-03-30 | 2020-07-31 | 415d | start no earlier than 2020-03-30 |
| 51 | 6.4 | Alle FB: Konzepte (Faktenblätter) |  | 110d | 2020-03-30 | 2020-08-28 | 395d | start no earlier than 2020-03-30 |
| 52 | 6.5 | K, T-G: Nutzungsvereinbarungen |  | 65d | 2020-03-30 | 2020-06-26 | 440d | start no earlier than 2020-03-30 |
| 53 | 6.6 | K, T-G: Stat. Triage |  | 150d | 2019-11-04 | 2020-05-29 | 460d | start no earlier than 2019-11-04 |
| 54 | 6.7 | K, T-G: PB/Stat. Überprüfung |  | 150d | 2020-05-04 | 2020-11-27 | 330d | start no earlier than 2020-05-04 |
| 55 | 6.8 | Alle FB: Massnahmen, Termine, Kosten |  | 155d | 2020-06-29 | 2021-01-29 | 285d | start no earlier than 2020-06-29 |
| 56 | 6.9 | Bauablauf/temp. Verkehrsführung |  | 80d | 2020-08-31 | 2020-12-18 | 315d | start no earlier than 2020-08-31 |
| 57 | 6.10 | Erstellung Fachdossiers Bau + BSA V0.1 |  | 150d | 2020-11-02 | 2021-05-28 | 200d | start no earlier than 2020-11-02 |
| 58 | 6.11 | Abgleich mit Dritten |  | 150d | 2020-11-02 | 2021-05-28 | 200d | start no earlier than 2020-11-02 |
| 59 | 6.12 | Erstellung Synthesedossier V0.1 |  | 90d | 2021-03-29 | 2021-07-30 | 155d | start no earlier than 2021-03-29 |
| 60 | 6.13 | Vernehmlassung |  | 65d | 2021-08-02 | 2021-10-29 | 90d | start no earlier than 2021-08-02 |
| 61 | 6.14 | Bereinigung |  | 45d | 2021-11-01 | 2021-12-31 | 45d | start no earlier than 2021-11-01 |
| 62 | 6.15 | Genehmigung |  | 45d | 2022-01-03 | 2022-03-04 | 15d | start no earlier than 2022-01-03 |

| ID | WBS | Task | Type | Duration | Start | Finish | Predecessors | Total slack | Free slack | Constraint |
| --- | --- | --- | --- | --- | --- | --- | --- | --- | --- | --- |
| 63 | 7 | **AP Lärm, 1 LSW** |  | 125d | 2020-06-29 | 2020-12-18 |  | 450d |  |  |
| 64 | 7.1 | Konzept |  | 25d | 2020-06-29 | 2020-07-31 |  | 430d |  | start no earlier than 2020-06-29 |
| 65 | 7.2 | NV, PB |  | 25d | 2020-08-03 | 2020-09-04 |  | 405d |  | start no earlier than 2020-08-02 |
| 66 | 7.3 | Massnahmen, Kosten, Termine |  | 40d | 2020-08-03 | 2020-09-25 |  | 390d |  | start no earlier than 2020-08-03 |
| 67 | 7.4 | Erstellung Dokumente |  | 45d | 2020-08-31 | 2020-10-30 |  | 365d |  | start no earlier than 2020-08-31 |
| 68 | 7.5 | Vernehmlassung |  | 20d | 2020-11-02 | 2020-11-27 |  | 345d |  | start no earlier than 2020-11-02 |
| 69 | 7.6 | Bereinigung Dokumente |  | 15d | 2020-11-30 | 2020-12-18 |  | 330d |  | start no earlier than 2020-11-30 |
| 70 | 8 | **Ausführungsprojekt AP SABA** |  | 500d | 2020-10-12 | 2022-09-09 |  | 0d |  |  |
| 71 | 8.1 | Konzepte |  | 61d | 2020-10-12 | 2021-01-04 |  | 24d | 0d | start no earlier than 2020-10-12 |
| 72 | 8.2 | Auslegung SABA-Standorte und Bauwerke |  | 190d | 2021-01-05 | 2021-09-27 | 71 | 19d | 0d | start no earlier than 2021-01-04 |
| 73 | 8.3 | Ergänzung Entwässerungssystem (Perimeter NS) | manual | 112d | 2021-04-26 | 2021-09-28 | 72FF |  |  |  |
| 74 | 8.4 | Auslegung BSA für SABA und Bauwerke |  | 45d | 2021-02-22 | 2021-10-08 |  | 240d |  | start no earlier than 2021-02-22 |
| 75 | 8.5 | Definition Bauliche Massnahmen (T-G, K) |  | 33d | 2021-08-26 | 2021-10-11 | 72FS-23d | 19d |  | finish no earlier than 2021-09-03 |
| 76 | 8.6 | Umweltnotiz (Erstinfo/Hauptarbeiten) |  | 63d | 2021-02-22 | 2021-11-12 |  | 215d |  | start no earlier than 2021-02-22 |
| 77 | 8.7 | Abgleich FG, Kosten, Termine |  | 45d | 2021-10-18 | 2021-12-17 | 75FS-23d | 190d |  | start no earlier than 2021-10-18 |
| 78 | 8.8 | Erstellung Dossier Bau + BSA V0.1 (3x) |  | 75d | 2021-11-01 | 2022-02-11 | 75FS-5d | 0d |  | start no earlier than 2021-11-01 |
| 79 | 8.9 | Vernehmlassung |  | 65d | 2022-02-14 | 2022-05-13 | 78 | 0d |  | start no earlier than 2021-08-30 |
| 80 | 8.10 | Bereinigung |  | 45d | 2022-05-16 | 2022-07-15 | 79 | 0d |  | start no earlier than 2021-11-29 |
| 81 | 8.11 | Technische Genehmigung (ASTRA F3/Zentrale) |  | 40d | 2022-07-18 | 2022-09-09 | 80 | 0d |  | start no earlier than 2022-01-31 |
| 82 | 9 | Ausführungsprojekt AP Installationen (evtl.) |  | 480d | 2020-05-25 | 2022-03-25 |  | 120d |  |  |
