# 20210107_EP Rh-Fr_TP_AP_SABA_9890-140_FCh

Schedule from MS Project, 2020-11-02 to 2022-07-07.
Aegerter & Bosshardt AG

## Calendars

- Standard: Mon-Fri 08:00-12:00, 13:00-17:00; Sat-Sun off. Exceptions (off unless hours are given): 2021-04-02 to 2021-04-05 (Ostern 2021), 2021-05-01 (1. Mai 2021), 2021-05-13 (Auffahrt 2021), 2021-05-24 (Pfingsten 2021), 2021-08-01 (Bundesfeier), 2021-12-23 to 2022-01-03 (Winterferien 2021/2020).

## Resources

| Resource |
| --- |
| IG RF BB (T/U) |
| ASTRA F3 |
| ASTRA FU |
| Kt Fachstellen |
| IG RF BB (SABA) |
| IG RF BB (BSA) |
| IG RF BB (T/G) |
| IG RF BB (K) |
| PV Geotechnik |
| PV Umwelt |
| PV Vermessung |
| BHU |
| Spez Verfahren |
| GE |

## Schedule

| ID | WBS | Task | Type | Duration | Start | Finish | Predecessors | Total slack | Free slack | Constraint | Resources | Work | Zuständigkeit |
| --- | --- | --- | --- | --- | --- | --- | --- | --- | --- | --- | --- | --- | --- |
| 1 | 1 | **AP SABA** |  | 270d | 2020-11-02 | 2021-11-18 |  | 48d |  |  |  | 5344h |  |
| 2 | 1.1 | Start | milestone | 0d | 2020-11-02 | 2020-11-02 |  | 361d | 0d |  |  |  |  |
| 3 | 1.2 | **Projektgrundlagen** |  | 71d | 2020-11-20 | 2021-02-26 |  | 34d |  |  |  | 1360h |  |
| 4 | 1.2.1 | Variantenvergleich Standorte |  | 40d | 2020-11-20 | 2021-01-14 | 2FS+10d | 373d |  | start no earlier than 2020-11-20 | IG RF BB (T/U) | 320h |  |
| 5 | 1.2.2 | Inhaltsverzeichnis (je AP/SABA-Standort) |  | 5d | 2021-01-08 | 2021-01-14 | 2FS+49d | 361d | 0d |  | IG RF BB (T/U); IG RF BB (SABA) | 80h |  |
| 6 | 1.2.3 | Vernehmlassung Inhaltsverzeichnis |  | 12d | 2021-01-18 | 2021-02-02 | 5FS+1d | 360d |  |  | ASTRA F3; ASTRA FU | 192h |  |
| 7 | 1.2.4 | Verifikation Grundlagen (Vermessung Geologie/Geotechnik, Werkleitungen) |  | 9d | 2021-01-04 | 2021-01-14 |  | 348d | 0d | start no earlier than 2021-01-04 | IG RF BB (T/U) | 72h | PV |
| 8 | 1.2.5 | Beschaffung ergänzende Vermessung (ausserhalb NS) |  | 10d | 2021-01-18 | 2021-01-29 | 7FS+1d | 352d | 0d |  | PV Vermessung | 80h |  |
| 9 | 1.2.6 | Beschaffung ergänzende geol./geotechnische Aufschlüsse |  | 25d | 2021-01-18 | 2021-02-19 | 7FS+1d | 347d |  |  | PV Geotechnik | 200h |  |
| 10 | 1.2.7 | Bau und Abstandslinien |  | 5d | 2021-02-01 | 2021-02-05 | 8 | 352d | 0d |  | PV Vermessung; IG RF BB (T/U) | 80h |  |
| 11 | 1.2.8 | Zusammenstellen DAW (bestehende Bauten nahe SABA sowie dezentrale PW) |  | 5d | 2021-02-08 | 2021-02-12 | 10 | 352d |  |  | IG RF BB (T/U) | 40h |  |
| 12 | 1.2.9 | Konzept Umgang Einleitungen Dritte |  | 37d | 2021-01-07 | 2021-02-26 |  | 0d |  | start no earlier than 2021-01-07 | IG RF BB (T/U) | 296h |  |
| 13 | 1.2.10 | Abgleich an PFS T/U | milestone | 0d | 2021-02-24 | 2021-02-24 |  | 345d |  | start no earlier than 2021-02-24 |  |  |  |
| 14 | 1.2.11 | Grundlagenbeschaffung abgeschlossen | milestone | 0d | 2021-02-26 | 2021-02-26 | 12 | 0d |  |  | IG RF BB (T/U) |  |  |
| 15 | 1.3 | **Dimensionierung/Verfahren** |  | 40d | 2021-03-01 | 2021-04-27 |  | 0d |  |  |  | 504h |  |
| 16 | 1.3.1 | Aktualisieren effektive EZG (Dritte: Kanton, SBB, ...) |  | 5d | 2021-03-01 | 2021-03-05 | 14 | 0d |  |  | IG RF BB (SABA) | 40h |  |
| 17 | 1.3.2 | Abgleich an PFS T/U | milestone | 0d | 2021-03-24 | 2021-03-24 |  | 325d |  | start no earlier than 2021-03-24 |  |  |  |
| 18 | 1.3.3 | Aktualisierung hydraulische Modelle |  | 15d | 2021-03-08 | 2021-03-26 | 16 | 0d |  |  | IG RF BB (SABA) | 120h |  |
| 19 | 1.3.4 | Druckleitungen: Auslegung Standorte und Ausrüstung |  | 15d | 2021-03-11 | 2021-03-31 | 18SS+3d | 319d |  | start no earlier than 2021-03-11 | IG RF BB (SABA) | 120h |  |
| 20 | 1.3.5 | Optimierungen hydraulische Modelle (Volumina - Weitergabemengen) |  | 8d | 2021-03-29 | 2021-04-09 | 18 | 0d |  |  | IG RF BB (SABA); IG RF BB (T/U) | 128h |  |
| 21 | 1.3.6 | Verfahrenswahl und Dimensionierung SABA inkl. LZ-Simulationen |  | 12d | 2021-04-12 | 2021-04-27 | 20 | 0d |  |  | IG RF BB (SABA) | 96h |  |
| 22 | 1.3.7 | Verfahrenswahl und Dimensionierung abgeschlossen | milestone | 0d | 2021-04-27 | 2021-04-27 | 21 | 222d | 0d |  |  |  |  |
| 23 | 1.4 | **Projektierung und Koordination SABA & Anlagen Strecke** |  | 85d | 2021-04-27 | 2021-08-26 | 21 | 0d |  |  |  | 2160h |  |
| 24 | 1.4.1 | Abgleich an PFS T/U & Einbezug GE | milestone | 0d | 2021-05-06 | 2021-05-06 |  | 296d |  | start no earlier than 2021-05-06 |  |  |  |
| 25 | 1.4.2 | Erstellen der R+I-Schemata |  | 12d | 2021-04-28 | 2021-05-14 | 22 | 222d | 0d |  | Spez Verfahren | 96h |  |
| 26 | 1.4.3 | BSA-Auslegung |  | 30d | 2021-05-17 | 2021-08-19 | 25 | 222d |  |  | IG RF BB (BSA) | 240h |  |
| 27 | 1.4.4 | Definition der Betriebszustände (6 St. je Anlage) |  | 19d | 2021-05-17 | 2021-06-11 | 25 | 271d |  |  | IG RF BB (SABA); GE | 304h |  |
| 28 | 1.4.5 | Erster Einbezug PV Umwelt | milestone | 0d | 2021-04-27 | 2021-04-27 |  | 302d |  |  | PV Umwelt |  | PV Umwelt |
| 29 | 1.4.6 | Baul. Auslegung der SABA, CAD-Bearbeitung |  | 50d | 2021-04-28 | 2021-07-08 | 21 | 0d |  |  | IG RF BB (SABA) | 400h | PV SABA |
| 30 | 1.4.7 | Einbezug Kunstbauten / Geotechnik |  | 30d | 2021-05-28 | 2021-08-05 | 29FS-30d | 232d |  |  | IG RF BB (K); IG RF BB (T/G) | 480h | PV K/T-G |
| 31 | 1.4.8 | Baul. Auslegung der Pumpwerke, Anlagen Strecke, CAD-Bearbeitung |  | 45d | 2021-05-12 | 2021-07-15 | 29FS-40d | 247d |  |  | IG RF BB (T/U) | 360h |  |
| 32 | 1.4.9 | Abgleich an PFS T/U | milestone | 0d | 2021-07-07 | 2021-07-07 |  | 254d |  | start no earlier than 2021-07-07 |  |  |  |
| 33 | 1.4.10 | Zugänglichkeit / äussere Infrastruktur |  | 20d | 2021-07-09 | 2021-08-05 | 29 | 0d |  |  | IG RF BB (T/U) | 160h |  |
| 34 | 1.4.11 | Abgleich Planung mit allen betroffenen TP & Dritten |  | 15d | 2021-08-06 | 2021-08-26 | 33 | 187d | 0d |  | IG RF BB (T/U) | 120h |  |
| 35 | 1.4.12 | Projektierung und Koordination abgeschlossen | milestone | 0d | 2021-08-26 | 2021-08-26 | 34 | 217d |  |  |  |  |  |

| ID | WBS | Task | Type | Duration | Start | Finish | Predecessors | Total slack | Free slack | Constraint | Resources | Work | Zuständigkeit |
| --- | --- | --- | --- | --- | --- | --- | --- | --- | --- | --- | --- | --- | --- |
| 36 | 1.5 | **Erstellung Dossier V0.1** |  | 75d | 2021-08-06 | 2021-11-18 | 33 | 0d |  |  |  | 1320h |  |
| 37 | 1.5.1 | Erstellen der UWN/UVB je SABA |  | 45d | 2021-08-06 | 2021-10-07 | 33 | 0d |  | start no earlier than 2021-07-26 | PV Umwelt | 360h | PV Umwelt |
| 38 | 1.5.2 | Technische Berichte mit Anlagenbeschrieb inkl. Kosten / Pläne |  | 20d | 2021-08-27 | 2021-09-23 | 34 | 187d | 0d |  | IG RF BB (T/U) | 160h |  |
| 39 | 1.5.3 | Koreferate |  | 10d | 2021-09-24 | 2021-10-07 | 38 | 187d |  |  | IG RF BB (T/U) | 80h |  |
| 40 | 1.5.4 | Vorstellung Dossiers (Vorabzug) | milestone | 0d | 2021-10-07 | 2021-10-07 | 37 | 0d |  |  | IG RF BB (T/U) |  |  |
| 41 | 1.5.5 | Stellungnahme GPL/BHU |  | 30d | 2021-10-08 | 2021-11-18 | 40 | 0d |  |  | ASTRA FU; ASTRA F3; BHU | 720h |  |
| 42 | 2 | **Dossier V1.0** |  | 110d | 2021-11-19 | 2022-05-03 |  | 0d |  |  |  | 1040h |  |
| 43 | 2.1 | Einarbeitung Rückmeldungen, Vorbereitung Dossiers je SABA inkl. Besprechungen |  | 15d | 2021-11-19 | 2021-12-09 | 41 | 0d |  |  | IG RF BB (T/U) | 120h |  |
| 44 | 2.2 | Vernehmlassung BHU-GPL |  | 20d | 2021-12-10 | 2022-01-18 | 43 | 122d |  |  | ASTRA F3 | 160h |  |
| 45 | 2.3 | Vernehmlassung EP - FU |  | 65d | 2021-12-10 | 2022-03-22 | 43 | 0d |  |  | ASTRA FU | 520h |  |
| 46 | 2.4 | Bereinigung |  | 30d | 2022-03-23 | 2022-05-03 | 45 | 0d |  |  | IG RF BB (T/U) | 240h |  |
| 47 | 3 | Technische Genehmigung FU |  | 40d | 2022-05-04 | 2022-06-28 | 46 | 0d |  |  | ASTRA FU | 320h |  |
| 48 | 4 | Eingabe an GS UVEK | milestone | 0d | 2022-07-07 | 2022-07-07 | 47FS+7d | 0d |  |  | ASTRA F3 |  |  |
| 49 | 5 | (Eingabe an UVEK gem RTP (04.05.2020)) | milestone | 0d | 2021-10-04 | 2021-10-04 |  | 191d |  | start no earlier than 2021-10-04 | ASTRA F3 |  |  |
| 50 | 6 | (Eingabe an UVEK gem RTP nur aktualisiert (04.05.2020)) | milestone | 0d | 2022-02-14 | 2022-02-14 |  | 104d |  | start no earlier than 2022-02-14 | ASTRA F3 |  |  |
| 52 | 7 | Sommerferien 2021 | manual | 30d | 2021-07-05 | 2021-08-13 |  |  |  |  |  |  |  |
