# Terminprogramm

Schedule from MS Project, 2018-10-01 to 2023-03-14, status date 2021-09-08, A marks actual dates.
Planung / Realisierung
Aegerter & Bosshardt AG

## Calendars

- Standard: Mon-Fri 08:00-12:00, 13:00-17:00; Sat-Sun off. Exceptions (off unless hours are given): 2018-10-13 08:00-12:00, 13:00-17:00, 2019-10-26 08:00-12:00, 13:00-17:00.

## Resources

| Resource |
| --- |
| TBA-H / -V |
| AeBo |
| Unt. |
| TBA-V |
| Kanton BS |
| AeBo+AUE+Eigent. |
| AUE |
| Eigent. |
| Eigentümer |
| AUE/AeBo |
| AUE, PL, U |
| SUBB |
| TBA, PL, U |
| TBA |
| TBA, PL, U-Inliner |
| U-Inliner |
| U-Baumeister |
| RR |
| TBA, PL, U-Inliner, etc. |
| PV |
| AeBo, TBA |
| Baumeister |
| Unternehmer |
| alle |
| ARGE KS |
| UN-Neubau |
| HBA, PV |
| UN |
| UN-Sanitär |
| UN-Inliner |
| HBA |
| UN-Baumeister |
| Ex team |
| Bauphase 1 |
| Bauphase 2 |
| Bauphase 3 |
| Bauphase 4 |
| Bauphase 5 |
| Bauphase 6 |
| Bauphase 7 |
| XXXXXXXXX |
| ASTRA / GE |
| ASTRA |
| PV / ASTRA |
| UUN |
| 10 |

## Schedule

| ID | WBS | Task | Type | Duration | Start | Finish | Predecessors | Complete | Constraint |
| --- | --- | --- | --- | --- | --- | --- | --- | --- | --- |
| 1 | 1 | Projektstart IG | milestone, manual | 1d | 2018-10-01 A | 2018-10-01 A |  | 100% |  |
| 3 | 2 | **Grundlagen** |  | 352d | 2018-10-01 A | 2020-01-31 A |  | 100% |  |
| 4 | 2.1 | Grundlagenverifikation |  | 71d | 2018-10-01 A | 2019-01-04 A |  | 100% | start no earlier than 2018-10-01 |
| 5 | 2.2 | erg. GL-Beschaffung Archive ASTRA/NSNW |  | 80d | 2018-12-10 A | 2019-03-29 A |  | 100% | start no earlier than 2018-12-10 |
| 6 | 2.3 | Aufarbeitung Archiv/Digitalisierung |  | 156d | 2019-04-01 A | 2019-11-01 A | 5 | 100% |  |
| 7 | 2.4 | Vervollständigen Grundlagen (Bauwerkskizzen etc) |  | 40d | 2019-08-05 A | 2019-09-27 A |  | 100% | start no earlier than 2019-08-05 |
| 8 | 2.5 | Plangrundlagen erarbeiten (u.a. IO-Plan) |  | 156d | 2019-07-01 A | 2020-01-31 A |  | 100% | start no earlier than 2019-07-01 |
| 9 | 2.6 | Perimeterdefinition in Situation | milestone | 1d | 2019-04-12 A | 2019-04-12 A |  | 100% | start no earlier than 2019-04-12 |
| 10 | 2.7 | Schnittstellen/Verantwortlichkeiten geklärt | milestone | 1d | 2019-04-12 A | 2019-04-12 A |  | 100% | start no earlier than 2019-04-12 |
| 11 | 2.8 | Einfluss aus Drittprojekten geklärt | milestone | 1d | 2019-03-01 A | 2019-03-01 A |  | 100% | start no earlier than 2019-03-01 |
| 12 | 3 | **Dritte** |  | 501d | 2019-04-29 A | 2021-03-26 A |  | 100% |  |
| 13 | 3.1 | Vermessung: Schachtprotokolle |  | 68d | 2019-04-29 A | 2019-07-31 A |  | 100% | start no earlier than 2019-04-29 |
| 14 | 3.2 | Vermessung: DTM, Aufnahmen |  | 110d | 2019-04-29 A | 2019-09-27 A |  | 100% | start no earlier than 2019-04-29 |
| 15 | 3.3 | Lärm: Prüfen Erforderlichkeit AP |  | 85d | 2019-06-03 A | 2019-09-27 A |  | 100% | start no earlier than 2019-06-03 |
| 16 | 3.4 | PV Umwelt/Akustiker/Verkehrsingenieur/Geologe Grundlagen |  | 196d | 2019-08-05 A | 2020-05-01 A |  | 100% | start no earlier than 2019-08-05 |
| 17 | 3.5 | Entscheid AP Lärm ja/nein | milestone | 1d | 2020-05-01 A | 2020-05-01 A |  | 100% | start no earlier than 2020-05-01 |
| 18 | 3.6 | **PV Akustik (AP LS)** |  | 240d | 2020-04-27 A | 2021-03-26 A |  | 100% |  |
| 19 | 3.6.1 | Erstellung Dossier V 0.9 |  | 175d | 2020-04-27 A | 2020-12-25 A |  | 100% | start no earlier than 2020-04-27 |
| 20 | 3.6.2 | Prüfung, Bereinigung, Technische Genehmigung |  | 60d | 2021-01-04 A | 2021-03-26 A |  | 100% | start no earlier than 2021-01-04 |
| 21 | 3.7 | PV Umwelt (UWN, Etc.) |  | 85d | 2020-08-03 A | 2020-11-27 A |  | 100% | start no earlier than 2020-08-03 |
| 22 | 4 | **Ergänzende Zustandserfassung** |  | 431d | 2019-03-04 A | 2020-10-23 A |  | 100% |  |
| 23 | 4.1 | HI inkl. Auswertung (ausstehende Obj./Programm 2019) |  | 150d | 2019-03-04 A | 2019-09-27 A |  | 100% | start no earlier than 2019-03-04 |
| 24 | 4.2 | Kanal-TV inkl. Spülen Entwässerungsleitungen * |  | 291d | 2019-03-04 A | 2020-04-10 A |  | 100% | start no earlier than 2019-03-04 |
| 25 | 4.3 | Kanal-TV Bachdurchlässe |  | 130d | 2020-01-01 A | 2020-06-30 A |  | 100% | finish no earlier than 2020-06-30 |
| 26 | 4.4 | Belag/Fundation (*) |  | 130d | 2019-04-01 A | 2019-09-27 A |  | 100% | start no earlier than 2019-04-01 |

| ID | WBS | Task | Type | Duration | Start | Finish | Predecessors | Complete | Remaining | Total slack | Free slack | Constraint |
| --- | --- | --- | --- | --- | --- | --- | --- | --- | --- | --- | --- | --- |
| 27 | 4.5 | **Kunstbauten/Stützmauern** |  | 235d | 2019-12-02 A | 2020-10-23 A |  | 100% |  |  |  |  |
| 28 | 4.5.1 | Erstellung Konzept inkl. Kostenschätzung |  | 75d | 2019-12-02 A | 2020-03-13 A |  | 100% |  |  |  | start no earlier than 2019-12-02 |
| 29 | 4.5.2 | Erstellung Unterlagen |  | 34d | 2020-03-16 A | 2020-04-30 A |  | 100% |  |  |  | start no earlier than 2020-03-16 |
| 30 | 4.5.3 | Submission |  | 15d | 2020-05-04 A | 2020-05-22 A |  | 100% |  |  |  | start no earlier than 2020-05-04 |
| 31 | 4.5.4 | Vergabeantrag IG |  | 10d | 2020-05-25 A | 2020-06-05 A |  | 100% |  |  |  | start no earlier than 2020-05-25 |
| 32 | 4.5.5 | Vergabe ASTRA |  | 15d | 2020-06-08 A | 2020-06-26 A |  | 100% |  |  |  | start no earlier than 2020-06-08 |
| 33 | 4.5.6 | Erfassung |  | 55d | 2020-07-06 A | 2020-09-18 A |  | 100% |  |  |  | start no earlier than 2020-07-06 |
| 34 | 4.5.7 | Auswertung |  | 40d | 2020-08-31 A | 2020-10-23 A |  | 100% |  |  |  | start no earlier than 2020-08-31 |
| 35 | 4.5.8 | Überwachungsmessungen Stützmauern 2020 |  | 65d | 2020-05-04 A | 2020-07-31 A |  | 100% |  |  |  | finish no earlier than 2020-07-31 |
| 36 | 4.5.9 | Ergänzende visuelle Inspektionen 2020; Kanal-TV Bachdurchlässe |  | 65d | 2020-05-04 A | 2020-07-31 A |  | 100% |  |  |  | start no earlier than 2020-05-04 |
| 37 | 4.6 | Fremdwassermessung (punktuell) |  | 20d | 2019-10-16 A | 2019-11-11 A |  | 100% |  |  |  |  |
| 38 | 4.7 | BSA: Schachtaufnahmen, Ausrüstungsgrad |  | 121d | 2019-10-14 A | 2020-03-27 A |  | 100% |  |  |  | start no earlier than 2019-10-14 |
| 39 | 5 | **Grundlagen Erhaltungskonzept EK** |  | 326d | 2019-07-01 A | 2020-09-25 A |  | 100% |  |  |  |  |
| 40 | 5.1 | Grundlagen GIS-basierte Entwässerungsplanung |  | 131d | 2019-07-01 A | 2019-12-27 A |  | 100% |  |  |  | start no earlier than 2019-07-01 |
| 41 | 5.2 | Übergeordnetes SABA-Konzept V 0.1 |  | 130d | 2019-12-02 A | 2020-05-29 A |  | 100% |  |  |  | start no earlier than 2019-12-01 |
| 42 | 5.3 | Entscheid SABA-Konzept überg. | milestone | 1d | 2020-06-11 A | 2020-06-11 A |  | 100% |  |  |  | start no earlier than 2020-06-11 |
| 43 | 5.4 | EP Rh-Fr SABA-Konzept V 0.9 |  | 65d | 2020-06-15 A | 2020-09-11 A |  | 100% |  |  |  | start no earlier than 2020-06-15 |
| 44 | 5.5 | Projektentscheid SABA Rh-Fr | milestone | 1d | 2020-09-25 A | 2020-09-25 A |  | 100% |  |  |  | start no earlier than 2020-09-25 |
| 45 | 5.6 | Grundsatzentscheide |  | 65d | 2020-03-02 A | 2020-05-29 A |  | 100% |  |  |  | start no earlier than 2020-03-02 |
| 46 | 5.7 | Entscheid Grundsatzentscheide | milestone | 1d | 2020-06-18 A | 2020-06-18 A |  | 100% |  |  |  | start no earlier than 2020-06-18 |
| 47 | 6 | **Massnahmenkonzept** |  | 811d | 2019-11-04 A | 2022-12-12 |  | 77% | 185.71d | 66d |  |  |
| 48 | 6.1 | T-U: Normalprofil/Normprüfung/Abschnittseinteilung |  | 88d | 2020-01-01 A | 2020-05-01 A |  | 100% |  |  |  | start no earlier than 2020-01-01 |
| 49 | 6.2 | T-U: Belagskonzept |  | 80d | 2020-04-13 A | 2020-07-31 A |  | 100% |  |  |  | start no earlier than 2020-04-13 |
| 50 | 6.3 | T-U: Hydraulische Prüfung / Entwässerungskonzept |  | 90d | 2020-03-30 A | 2020-07-31 A |  | 100% |  |  |  | start no earlier than 2020-03-30 |
| 51 | 6.4 | Alle FB: Konzepte (Faktenblätter) |  | 110d | 2020-03-30 A | 2020-08-28 A |  | 100% |  |  |  | start no earlier than 2020-03-30 |
| 52 | 6.5 | K, T-G: Nutzungsvereinbarungen |  | 65d | 2020-03-30 A | 2020-06-26 A |  | 100% |  |  |  | start no earlier than 2020-03-30 |
| 53 | 6.6 | K, T-G: Stat. Triage |  | 150d | 2019-11-04 A | 2020-05-29 A |  | 100% |  |  |  | start no earlier than 2019-11-04 |
| 54 | 6.7 | K, T-G: PB/Stat. Überprüfung |  | 150d | 2020-05-04 A | 2020-11-27 A |  | 100% |  |  |  | start no earlier than 2020-05-04 |
| 55 | 6.8 | Alle FB: Massnahmen, Termine, Kosten |  | 155d | 2020-06-29 A | 2021-01-29 A |  | 100% |  |  |  | start no earlier than 2020-06-29 |
| 56 | 6.9 | Bauablauf/temp. Verkehrsführung |  | 80d | 2020-08-31 A | 2020-12-18 A |  | 100% |  |  |  | start no earlier than 2020-08-31 |
| 57 | 6.10 | Erstellung Fachdossiers Bau + BSA V0.1 |  | 150d | 2020-11-02 A | 2021-05-28 A |  | 100% |  |  |  | start no earlier than 2020-11-02 |
| 58 | 6.11 | Abgleich mit Dritten |  | 150d | 2020-11-02 A | 2021-05-28 A |  | 100% |  |  |  | start no earlier than 2020-11-02 |
| 59 | 6.12 | Erstellung Synthesedossier V0.1 |  | 90d | 2021-03-29 A | 2021-07-30 A |  | 100% |  |  |  | start no earlier than 2021-03-29 |
| 60 | 6.13 | Stillstand MK-Dossier |  | 87d | 2021-08-02 A | 2021-11-30 | 59 | 32% | 59d | 66d | 0d |  |
| 61 | 6.14 | Abgleich Dossier mit APs und Ergänzungen |  | 44d | 2021-12-01 | 2022-01-31 | 60, 65 |  |  | 66d | 0d |  |

| ID | WBS | Task | Type | Duration | Start | Finish | Predecessors | Complete | Remaining | Total slack | Free slack | Constraint |
| --- | --- | --- | --- | --- | --- | --- | --- | --- | --- | --- | --- | --- |
| 62 | 6.15 | **Dossierergänzungen** |  | 91d | 2021-07-08 A | 2021-11-11 |  | 32% | 62.16d |  |  |  |
| 63 | 6.15.1 | GHGW; Freigabe | milestone | 0d | 2021-07-08 A | 2021-07-08 A |  | 100% |  |  |  | start no earlier than 2021-07-08 |
| 64 | 6.15.2 | GHGW; Standortdefinition (PV Verkehr) |  | 39d | 2021-07-08 A | 2021-08-31 |  | 64% | 14d | 20d | 0d |  |
| 65 | 6.15.3 | GHGW; Projektierung T/U inkl. BSA, K (& T/G) |  | 65d | 2021-09-01 A | 2021-11-30 | 64 | 31% | 45d | 66d | 0d |  |
| 66 | 6.15.4 | GHGW Integration in MK-Dossier |  | 38d | 2021-11-01 | 2021-12-22 | 65FS-22d |  |  | 184d |  | start no earlier than 2021-11-01 |
| 67 | 6.16 | MK: Vorprüfung GPL/BHU - allfällige Überarbeitung Dossier |  | 43d | 2022-02-01 | 2022-03-31 | 61, 83 |  |  | 66d | 0d | start no earlier than 2021-08-02 |
| 68 | 6.17 | MK: Bereinigte Fassung | milestone | 0d | 2022-03-31 | 2022-03-31 | 67 |  |  | 66d | 0d | start no earlier than 2021-11-01 |
| 69 | 6.18 | MK: Prüfung Vorabzug - Genehmigung |  | 182d | 2022-04-01 | 2022-12-12 | 68 |  |  | 66d |  | start no earlier than 2022-01-03 |
| 70 | 7 | **AP Lärm, 1 LSW** |  | 457d | 2020-06-29 A | 2022-03-29 |  | 37% | 287.37d | 250d |  |  |
| 71 | 7.1 | Konzept |  | 25d | 2020-06-29 A | 2020-07-31 A |  | 100% |  |  |  | start no earlier than 2020-06-29 |
| 72 | 7.2 | NV, PB |  | 25d | 2020-08-03 A | 2020-09-04 A |  | 100% |  |  |  | start no earlier than 2020-08-02 |
| 73 | 7.3 | Massnahmen, Kosten, Termine |  | 40d | 2020-08-03 A | 2020-09-25 A |  | 100% |  |  |  | start no earlier than 2020-08-03 |
| 74 | 7.4 | Erstellung Dokumente |  | 45d | 2020-08-31 A | 2020-10-30 A |  | 100% |  |  |  | start no earlier than 2020-08-31 |
| 75 | 7.5 | AP: Prüfung Vorabzug FU bis Auflage |  | 293d | 2021-01-01 A | 2022-02-15 |  | 7% | 273d | 15d | 0d | start no earlier than 2020-11-02 |
| 76 | 7.6 | AP: Öffentliche Auflage |  | 30d | 2022-02-16 A | 2022-03-29 | 75 | 50% | 15d | 250d |  |  |
| 77 | 8 | **Ausführungsprojekt AP SABA** |  | 617d | 2020-11-02 A | 2023-03-14 |  | 39% | 377.51d | 0d |  |  |
| 78 | 8.1 | Konzepte (Faktenblätter) |  | 65d | 2020-11-02 A | 2021-01-29 A |  | 100% |  |  |  | start no earlier than 2020-11-02 |
| 79 | 8.2 | NV, PB |  | 20d | 2021-02-01 A | 2021-02-26 A | 78 | 100% |  |  |  | start no earlier than 2020-10-12 |
| 80 | 8.3 | Massnahmen, Kosten, Termine |  | 140d | 2021-03-01 A | 2021-09-10 | 79 | 99% | 2d | 392d | 0d |  |
| 81 | 8.4 | Erstellung Dossier Bau + BSA V0.1 |  | 148d | 2021-06-01 A | 2021-12-23 | 80SS+66d | 49% | 76d | 318d |  | start no earlier than 2021-01-04 |
| 82 | 8.5 | ZL Überprüfung Drittflächen |  | 69d | 2021-09-20 | 2021-12-23 |  |  |  | 0d |  | start no earlier than 2021-09-20 |
| 83 | 8.6 | AP SABA - Abgleich über alle TP |  | 27d | 2021-12-24 | 2022-01-31 | 82 |  |  | 0d |  |  |
| 84 | 8.7 | AP: Prüfung Vorabzug FU bis Auflage |  | 261d | 2022-02-01 | 2023-01-31 | 83 |  |  | 0d |  | start no earlier than 2021-08-30 |
| 85 | 8.8 | AP: Öffentliche Auflage |  | 30d | 2023-02-01 | 2023-03-14 | 84 |  |  | 0d |  | start no earlier than 2021-11-29 |

| ID | WBS | Task | Type | Duration | Start | Finish | Predecessors | Complete | Remaining | Total slack | Free slack | Constraint |
| --- | --- | --- | --- | --- | --- | --- | --- | --- | --- | --- | --- | --- |
| 86 | 9 | **AP AS Frick - Bypass Kreisel West** |  | 346d | 2021-09-15 | 2023-01-11 |  |  |  | 44d |  |  |
| 87 | 9.1 | Entscheid AP | milestone | 0d | 2021-09-15 | 2021-09-15 |  |  |  | 44d | 0d | start no earlier than 2021-09-15 |
| 88 | 9.2 | AP Dossier |  | 58d | 2021-09-15 | 2021-12-03 | 87 |  |  | 44d | 0d | start no earlier than 2021-09-03 |
| 89 | 9.3 | AP: Prüfung Vorabzug FU bis Auflage |  | 258d | 2021-12-06 | 2022-11-30 | 88 |  |  | 44d | 0d |  |
| 90 | 9.4 | AP: Öffentliche Auflage |  | 30d | 2022-12-01 | 2023-01-11 | 89 |  |  | 44d |  |  |
| 91 | 10 | Ausführungsprojekt AP Installationen |  | 480d | 2020-05-25 A | 2022-03-25 |  | 70% | 142d | 252d |  |  |
| 93 | 11 | Landerwerb abschliessend behandelt | milestone | 0d | 2021-10-22 | 2021-10-22 |  |  |  | 162d | 0d | start no earlier than 2021-10-22 |
| 94 | 12 | AP-Dossier Installationsplätze |  | 109d | 2021-07-01 A | 2021-12-23 | 93FF+45d | 46% | 59d | 21d | 0d | start no earlier than 2021-07-01 |
| 95 | 13 | AP: Prüfung Vorabzug FU bis Auflage |  | 261d | 2022-01-03 | 2023-01-02 | 94FS+6d |  |  | 21d | 0d |  |
| 96 | 14 | AP: Öffentliche Auflage |  | 30d | 2023-01-03 | 2023-02-13 | 95 |  |  | 21d |  |  |
