# AP_SABA_single

Schedule from MS Project, 2020-11-02 to 2022-05-06.
Aegerter & Bosshardt AG

## Calendars

- Standard: Mon-Fri 08:00-12:00, 13:00-17:00; Sat-Sun off.

## Resources

| Resource |
| --- |
| IG RF BB (T/U) |
| ASTRA F3 |
| ASTRA FU |
| Kt Fachstellen |
| IG RF BB (SABA) |
| IG RF BB (BSA) |
| IG RF BB (T/G) |
| IG RF BB (K) |
| PV Geotechnik |
| PV Umwelt |
| PV Vermessung |
| BHU |
| Spez Verfahren |
| GE |

## Schedule

| ID | WBS | Task | Type | Duration | Start | Finish | Predecessors | Total slack | Free slack | Constraint | Resources | Work | Zuständigkeit |
| --- | --- | --- | --- | --- | --- | --- | --- | --- | --- | --- | --- | --- | --- |
| 1 | 1 | **AP SABA** |  | 265d | 2020-11-02 | 2021-11-05 |  | 48d |  |  |  | 5280h |  |
| 2 | 1.1 | Start | milestone | 0d | 2020-11-02 | 2020-11-02 |  | 231d | 0d |  |  |  |  |
| 3 | 1.2 | **Projektgrundlagen** |  | 75d | 2020-11-16 | 2021-02-26 |  | 38d |  |  |  | 1352h |  |
| 4 | 1.2.1 | Variantenvergleich Standorte |  | 44d | 2020-11-16 | 2021-01-14 | 2FS+10d | 350d |  |  | IG RF BB (T/U) | 352h |  |
| 5 | 1.2.2 | Inhaltsverzeichnis (je AP/SABA-Standort) |  | 5d | 2021-01-08 | 2021-01-14 | 2FS+49d | 338d | 0d |  | IG RF BB (T/U) | 40h |  |
| 6 | 1.2.3 | Vernehmlassung Inhaltsverzeichnis |  | 12d | 2021-01-15 | 2021-02-01 | 5 | 338d |  |  | ASTRA F3; ASTRA FU | 192h |  |
| 7 | 1.2.4 | Verifikation Grundlagen (Vermessung Geologie/Geotechnik, Werkleitungen) |  | 9d | 2021-01-04 | 2021-01-14 |  | 335d | 0d | start no earlier than 2021-01-04 | IG RF BB (T/U) | 72h | PV |
| 8 | 1.2.5 | Beschaffung ergänzende Vermessung (ausserhalb NS) |  | 10d | 2021-01-15 | 2021-01-28 | 7 | 330d | 0d |  | PV Vermessung | 80h |  |
| 9 | 1.2.6 | Beschaffung ergänzende geol./geotechnische Aufschlüsse |  | 25d | 2021-01-15 | 2021-02-18 | 7 | 335d |  |  | PV Geotechnik | 200h |  |
| 10 | 1.2.7 | Bau und Abstandslinien |  | 5d | 2021-01-29 | 2021-02-04 | 8 | 331d | 0d |  | PV Vermessung; IG RF BB (T/U) | 80h |  |
| 11 | 1.2.8 | Zusammenstellen DAW (bestehende Bauten nahe SABA sowie dezentrale PW) |  | 5d | 2021-02-05 | 2021-02-11 | 10 | 331d |  |  | IG RF BB (T/U) | 40h |  |
| 12 | 1.2.9 | Konzept Umgang Einleitungen Dritte |  | 37d | 2021-01-07 | 2021-02-26 |  | 0d |  | start no earlier than 2021-01-07 | IG RF BB (T/U) | 296h |  |
| 13 | 1.2.10 | Abgleich an PFS T/U | milestone | 0d | 2021-02-24 | 2021-02-24 | 12FS-3d | 322d |  |  |  |  |  |
| 14 | 1.2.11 | Grundlagenbeschaffung abgeschlossen | milestone | 0d | 2021-02-26 | 2021-02-26 | 12 | 320d |  |  | IG RF BB (T/U) |  |  |
| 15 | 1.3 | **Dimensionierung/Verfahren** |  | 40d | 2021-03-01 | 2021-04-23 | 12 | 0d |  |  |  | 504h |  |
| 16 | 1.3.1 | Aktualisieren effektive EZG (Dritte: Kanton, SBB, ...) |  | 5d | 2021-03-01 | 2021-03-05 | 12 | 0d |  |  | IG RF BB (SABA) | 40h |  |
| 17 | 1.3.2 | Abgleich an PFS T/U | milestone | 0d | 2021-03-24 | 2021-03-24 |  | 303d |  | start no earlier than 2021-03-24 |  |  |  |
| 18 | 1.3.3 | Aktualisierung hydraulische Modelle |  | 15d | 2021-03-08 | 2021-03-26 | 16 | 0d |  |  | IG RF BB (SABA) | 120h |  |
| 19 | 1.3.4 | Druckleitungen: Auslegung Standorte und Ausrüstung |  | 15d | 2021-03-11 | 2021-03-31 | 16FS+3d | 297d |  | start no earlier than 2021-03-11 | IG RF BB (T/U) | 120h |  |
| 20 | 1.3.5 | Optimierungen hydraulische Modelle (Volumina - Weitergabemengen) |  | 8d | 2021-03-29 | 2021-04-07 | 18 | 0d |  |  | IG RF BB (SABA); IG RF BB (T/U) | 128h |  |
| 21 | 1.3.6 | Verfahrenswahl und Dimensionierung SABA inkl. LZ-Simulationen |  | 12d | 2021-04-08 | 2021-04-23 | 20 | 0d |  |  | IG RF BB (SABA) | 96h |  |
| 22 | 1.3.7 | Verfahrenswahl und Dimensionierung abgeschlossen | milestone | 0d | 2021-04-23 | 2021-04-23 | 21 | 224d | 0d |  |  |  |  |
| 23 | 1.4 | **Projektierung und Koordination SABA & Anlagen entlang N3** |  | 80d | 2021-04-23 | 2021-08-13 | 21 | 0d |  |  |  | 2120h |  |
| 24 | 1.4.1 | Abgleich an PFS T/U & Einbezug GE | milestone | 0d | 2021-05-06 | 2021-05-06 |  | 272d |  | start no earlier than 2021-05-06 |  |  |  |
| 25 | 1.4.2 | Erstellen der R+I-Schemata |  | 12d | 2021-04-26 | 2021-05-11 | 22 | 200d | 0d |  | Spez Verfahren | 96h |  |
| 26 | 1.4.3 | BSA-Auslegung |  | 30d | 2021-05-12 | 2021-08-13 | 25 | 200d |  |  | IG RF BB (BSA) | 240h |  |
| 27 | 1.4.4 | Definition der Betriebszustände (6 St. je Anlage) |  | 19d | 2021-05-12 | 2021-06-07 | 25 | 249d |  |  | IG RF BB (SABA); GE | 304h |  |
| 28 | 1.4.5 | Einbezug PV Umwelt | milestone | 0d | 2021-04-23 | 2021-04-23 |  | 280d |  |  | PV Umwelt |  | PV Umwelt |
| 29 | 1.4.6 | Baul. Auslegung der SABA, CAD-Bearbeitung |  | 45d | 2021-04-26 | 2021-06-25 | 21 | 0d |  |  | IG RF BB (SABA) | 360h | PV SABA |
| 30 | 1.4.7 | Einbezug Kunstbauten / Geotechnik |  | 30d | 2021-05-17 | 2021-06-25 | 29FS-30d | 234d |  |  | IG RF BB (K); IG RF BB (T/G) | 480h | PV K/T-G |
| 31 | 1.4.8 | Baul. Auslegung der Pumpwerke, Anlagen Strecke, CAD-Bearbeitung |  | 45d | 2021-05-10 | 2021-07-09 | 29FS-35d | 224d |  |  | IG RF BB (T/U) | 360h |  |
| 32 | 1.4.9 | Abgleich an PFS T/U | milestone | 0d | 2021-07-07 | 2021-07-07 |  | 227d |  | start no earlier than 2021-07-07 |  |  |  |
| 33 | 1.4.10 | Zugänglichkeit / äussere Infrastruktur |  | 20d | 2021-06-28 | 2021-07-23 | 29 | 0d |  |  | IG RF BB (T/U) | 160h |  |
| 34 | 1.4.11 | Abgleich Planung mit allen betroffenen TP & Dritten |  | 15d | 2021-07-26 | 2021-08-13 | 33 | 172d | 0d |  | IG RF BB (T/U) | 120h |  |
| 35 | 1.4.12 | Projektierung und Koordination abgeschlossen | milestone | 0d | 2021-08-13 | 2021-08-13 | 34 | 199d |  |  |  |  |  |

| ID | WBS | Task | Type | Duration | Start | Finish | Predecessors | Total slack | Free slack | Constraint | Resources | Work | Zuständigkeit |
| --- | --- | --- | --- | --- | --- | --- | --- | --- | --- | --- | --- | --- | --- |
| 36 | 1.5 | **Erstellung Dossier V0.1** |  | 75d | 2021-07-26 | 2021-11-05 | 33 | 0d |  |  |  | 1304h |  |
| 37 | 1.5.1 | Erstellen der UWN/UVB je SABA |  | 45d | 2021-07-26 | 2021-09-24 | 33 | 0d |  | start no earlier than 2021-07-26 | PV Umwelt | 360h | PV Umwelt |
| 38 | 1.5.2 | Technische Berichte mit Anlagenbeschrieb inkl. Kosten / Pläne |  | 18d | 2021-08-16 | 2021-09-08 | 34 | 172d | 0d |  | IG RF BB (T/U) | 144h |  |
| 39 | 1.5.3 | Koreferate |  | 10d | 2021-09-09 | 2021-09-22 | 38 | 162d |  |  | IG RF BB (T/U) | 80h |  |
| 40 | 1.5.4 | Vorstellung Dossiers (Vorabzug) | milestone | 0d | 2021-09-24 | 2021-09-24 | 37 | 130d | 0d |  | IG RF BB (T/U) |  |  |
| 41 | 1.5.5 | Stellungnahme GPL/BHU |  | 30d | 2021-09-27 | 2021-11-05 | 40 | 130d |  |  | ASTRA FU; ASTRA F3; BHU | 720h |  |
| 42 | 2 | **Dossier V1.0** |  | 110d | 2021-09-27 | 2022-02-25 |  | 0d |  |  |  | 1040h |  |
| 43 | 2.1 | Einarbeitung Rückmeldungen, Vorbereitung Dossiers je SABA inkl. Besprechungen |  | 15d | 2021-09-27 | 2021-10-15 | 37 | 0d |  |  | IG RF BB (T/U) | 120h |  |
| 44 | 2.2 | Vernehmlassung BHU-GPL |  | 20d | 2021-10-18 | 2021-11-12 | 43 | 135d |  |  | ASTRA F3 | 160h |  |
| 45 | 2.3 | Vernehmlassung EP - FU |  | 65d | 2021-10-18 | 2022-01-14 | 43 | 0d |  |  | ASTRA FU | 520h |  |
| 46 | 2.4 | Bereinigung |  | 30d | 2022-01-17 | 2022-02-25 | 45 | 0d |  |  | IG RF BB (T/U) | 240h |  |
| 47 | 3 | Technische Genehmigung FU |  | 40d | 2022-02-28 | 2022-04-22 | 46 | 0d |  |  | ASTRA FU | 320h |  |
| 48 | 4 | Eingabe an GS UVEK | milestone | 0d | 2022-05-06 | 2022-05-06 | 47FS+10d | 0d |  |  | ASTRA F3 |  |  |
| 49 | 5 | (Eingabe an UVEK gem RTP (04.05.2020)) | milestone | 0d | 2021-10-04 | 2021-10-04 |  | 165d |  | start no earlier than 2021-10-04 | ASTRA F3 |  |  |
| 50 | 6 | (Eingabe an UVEK gem RTP nur aktualisiert (04.05.2020)) | milestone | 0d | 2022-02-14 | 2022-02-14 |  | 70d |  | start no earlier than 2022-02-14 | ASTRA F3 |  |  |
