Schedule from MS Project, 2018-10-01 to 2023-03-01.
Aegerter & Bosshardt AG

## Calendars

- Standard: Mon-Fri 08:00-12:00, 13:00-17:00; Sat-Sun off. Exceptions (off unless hours are given): 2018-12-08 08:00-12:00, 13:00-17:00.

## Resources

| Resource |
| --- |
| 03.07.15 (+3 Monate) |
| 24.08.15 |
| 26.05. |
| PGV-Dauer |
| PGV-Dauer 12 Monate |
| 05.08. |
| 04.08 |
| 10.02.2018 |
| 10.02. |
| 09.02.18 |
| 29.03.19 |
| (LB) |
| Sab |
| Uar |
| Uat |

## Schedule

| ID | WBS | Task | Type | Duration | Start | Finish | Predecessors | Total slack | Free slack | Constraint | Text1 | Text2 | Text3 | Text4 | Text22 | Text5 |
| --- | --- | --- | --- | --- | --- | --- | --- | --- | --- | --- | --- | --- | --- | --- | --- | --- |
| 1 | 1 | Projektstart IG |  | 1d | 2018-10-01 | 2018-10-01 |  | 934.5d |  | start no earlier than 2018-10-01 |  |  |  |  |  |  |
| 3 | 2 | Grundlagenverifikation |  | 14.1w | 2018-10-01 | 2019-01-04 |  | 865d |  | start no earlier than 2018-10-01 |  |  |  |  |  |  |
| 4 | 3 | erg. GL-Beschaffung Archive ASTRA/NSNW |  | 16w | 2018-12-10 | 2019-03-29 |  | 804.5d |  | start no earlier than 2018-12-10 |  |  |  |  |  |  |
| 5 | 4 | Aufarbeitung Archiv/Digitalisierung |  | 154d | 2019-04-01 | 2019-10-31 |  | 868.5d |  | start no earlier than 2019-04-01 |  |  |  |  |  |  |
| 6 | 5 | Vervollständigen Grundlagen (Bauwerkskizzen etc) |  | 8.4w | 2019-08-02 | 2019-09-30 |  | 782.5d |  | finish no earlier than 2019-09-30 |  |  |  |  |  |  |
| 7 | 6 | Plangrundlagen erarbeiten (u.a. IO-Plan) |  | 8.8w | 2019-10-01 | 2019-11-29 | 12 | 738.5d |  | finish no earlier than 2019-11-29 |  |  |  |  |  |  |
| 8 | 7 | Perimeterdefinition in Situation |  | 1d | 2019-04-12 | 2019-04-12 |  | 794.5d |  | start no earlier than 2019-04-12 |  |  |  |  |  |  |
| 9 | 8 | Schnittstellen/Verantwortlichkeiten geklärt |  | 1d | 2019-04-12 | 2019-04-12 |  | 794.5d |  | start no earlier than 2019-04-12 |  |  |  |  |  |  |
| 10 | 9 | Einfluss aus Drittprojekten geklärt |  | 1d | 2019-03-01 | 2019-03-01 |  | 977.5d |  | start no earlier than 2019-03-01 |  |  |  |  |  |  |
| 11 | 10 | Vermessung: Schachtprotokolle |  | 13.6w | 2019-04-29 | 2019-07-31 |  | 805.5d | 1d | start no earlier than 2019-04-29 |  |  |  |  |  |  |
| 12 | 11 | Vermessung: DTM, Aufnahmen |  | 22w | 2019-04-30 | 2019-09-30 |  | 782.5d | 0d | finish no earlier than 2019-09-30 |  |  |  |  |  |  |
| 13 | 12 | Lärm: Prüfen Erforderlichkeit AP |  | 17w | 2019-06-04 | 2019-09-30 |  | 782.5d |  | finish no earlier than 2019-09-30 |  |  |  |  |  |  |
| 14 | 13 | PV Umwelt/Akustiker/Verkehrsingenieur/Geologe |  | 130d | 2019-06-03 | 2019-11-29 |  | 738.5d |  | finish no earlier than 2019-11-29 |  |  |  |  |  |  |
| 15 | 14 | HI inkl Auswertung (ausstehende Obj./Programm 2019) |  | 4w | 2019-03-01 | 2019-03-28 |  | 1023.5d |  | start no earlier than 2019-03-01 |  |  |  |  |  |  |
| 16 | 15 | **Ergänzende Zustandserfassung / Statische Nachweise** |  | 272d | 2018-10-01 | 2019-10-14 |  |  |  |  |  |  |  |  |  |  |
| 17 | 15.1 | Kanal-TV inkl. Spülen Entwässerungsleitungen * | manual | 43d | 2019-03-01 | 2019-04-30 |  |  |  | start no earlier than 2019-03-01 | Sub | Unt | PrV | Erf | Ausw |  |
| 18 | 15.2 | Belag/Fundation (*) | manual | 55d | 2019-04-01 | 2019-06-14 |  |  |  | start no earlier than 2019-04-01 | Sub | Unt | PrV | Erf | Ausw |  |
| 19 | 15.3 | **Kunstbauten** |  | 42d | 2019-12-02 | 2020-01-28 |  |  |  |  | Sub | Konzept | Prv | Erf | Ausw |  |
| 20 | 15.3.1 | Erstellung Konzept inkl. Kostenschätzung | manual | 42d | 2019-12-02 | 2020-01-28 |  |  |  |  | Sub | Konzept | Prv | Erf | Ausw |  |
| 21 | 15.4 | Fremdwassermessung (punktuell) * |  | 21d | 2019-08-02 | 2019-08-30 |  | 912.5d |  | finish no earlier than 2019-08-30 |  |  | nass | trocken | Ausw |  |
| 22 | 15.5 | Fremdwassermessung (Langzeit) (*) | manual | 44d | 2020-03-02 | 2020-04-30 |  |  |  |  | Sub | Unt | Prv | Erf | Ausw |  |
| 23 | 15.6 | BSA: Schachtaufnahmen, Ausrüstungsgrad * | manual | 22d | 2019-05-02 | 2019-05-31 |  |  |  |  | Sub | Unt | Prv | Erf | Ausw | Weitere Aufnahm./Schächte |
| 24 | 15.7 | Permanente Anker |  | 13w | 2019-07-01 | 2019-09-27 |  | 892.5d |  | start no earlier than 2019-07-01 |  |  |  |  |  |  |
| 25 | 16 | **Erhaltungskonzept EK** |  | 585d | 2019-08-05 | 2021-10-29 |  | 85d |  |  |  |  |  |  |  |  |
| 26 | 16.1 | Konzept Entwässerung/SABA/Hydraul. Prüfung Anpassung Entwässerung - SABA |  | 4.2w | 2019-12-02 | 2019-12-30 | 29, 11 | 826.5d |  | finish no earlier than 2019-12-30 |  | Struktur | Hydraulik |  | Varianten/SABA |  |
| 27 | 16.2 | Installationskonzept |  | 13w | 2019-12-02 | 2020-02-28 |  | 782.5d |  | finish no earlier than 2020-02-28 |  |  |  |  |  |  |
| 28 | 16.3 | AP'(e) SABA/Installationen/Lärm ja/nein |  | 1d | 2020-02-28 | 2020-02-28 |  | 782.5d |  | start no earlier than 2020-02-28 |  |  | Install/Lärm |  | SABA |  |
| 29 | 16.4 | Entwässerung/Einzugsgebiete/Grundlagen GIS-Entwässerung |  | 11w | 2019-08-05 | 2019-10-18 | 11 | 856.5d | 30d | finish no earlier than 2019-10-18 |  |  | Übernahme | Prüfung | Bearbeitung | Plausibilität |
| 30 | 16.5 | Grundsatzentscheide |  | 12w | 2020-01-06 | 2020-03-27 |  | 762.5d |  | start no earlier than 2020-01-06 |  |  |  |  |  |  |
| 31 | 16.6 | Stat. Triage (K + SM) |  | 4w | 2019-11-04 | 2019-11-29 |  | 847.5d |  | finish no earlier than 2019-11-29 |  |  |  |  |  |  |
| 32 | 16.7 | stat. Überprüfung K + SM | manual | 65d | 2019-12-02 | 2020-02-28 |  |  |  |  |  |  |  |  |  |  |
| 33 | 16.8 | Engineering/Konzeptentscheide |  | 219d | 2020-03-02 | 2020-12-31 |  | 563.5d |  | finish no earlier than 2020-12-31 |  |  |  |  |  |  |
| 34 | 16.9 | Dossiererstellung |  | 150d | 2020-08-03 | 2021-02-26 |  | 522.5d |  | finish no earlier than 2021-02-26 |  |  |  |  |  |  |
| 35 | 16.10 | Synthesedossier |  | 44d | 2021-02-01 | 2021-04-01 |  | 0d |  | start no earlier than 2021-02-01 |  |  |  |  |  |  |
| 36 | 16.11 | Vernehmlassung |  | 13.2w | 2021-04-02 | 2021-07-02 | 35 | 0d |  |  |  |  |  |  |  |  |
| 37 | 16.12 | Überarbeitung |  | 44d | 2021-07-01 | 2021-08-31 |  | 390.5d |  | start no earlier than 2021-07-01 |  |  |  |  |  |  |
| 38 | 16.13 | Genehmigung |  | 8.6w | 2021-09-01 | 2021-10-29 |  | 347.5d |  | finish no earlier than 2021-10-29 |  |  |  |  |  |  |
| 39 | 17 | Massnahmenkonzept |  | 86.5w | 2021-07-05 | 2023-03-01 | 36 | 0d |  | start no earlier than 2020-09-02 |  |  |  |  |  |  |

| ID | WBS | Task | Type | Duration | Start | Finish | Predecessors | Total slack | Constraint |
| --- | --- | --- | --- | --- | --- | --- | --- | --- | --- |
| 40 | 18 | **Ausführungsprojekt AP Lärm (evtl. / nur Fall SSF)** |  | 427d | 2019-10-01 | 2021-05-19 |  |  |  |
| 41 | 18.1 | Engineering |  | 110d | 2020-06-01 | 2020-10-30 |  | 607.5d | finish no earlier than 2020-10-30 |
| 42 | 18.2 | Dossiererstellung |  | 17w | 2020-11-02 | 2021-02-26 |  | 522.5d | finish no earlier than 2021-02-26 |
| 43 | 18.3 | Vernehmlassung |  | 13w | 2021-04-01 | 2021-06-30 |  | 434.5d | start no earlier than 2021-04-01 |
| 44 | 18.4 | Überarbeitung |  | 43d | 2021-07-01 | 2021-08-30 |  | 391.5d | start no earlier than 2021-07-01 |
| 45 | 18.5 | Techn. Genehmigung |  | 8.6w | 2021-09-01 | 2021-10-29 |  | 347.5d | finish no earlier than 2021-10-29 |
| 46 | 18.6 | Abgabe AP an UVEK (sofern Auflage notwendig) | manual | 1d? | 2019-10-01 | 2019-10-01 |  |  |  |
| 47 | 19 | Ausführungsprojekt AP SABA |  | 86.5w | 2021-07-05 | 2023-03-01 | 36 | 0d | start no earlier than 2020-09-02 |
| 48 | 20 | Ausführungsprojekt AP Installationen |  | 86.5w | 2021-07-05 | 2023-03-01 | 36 | 0d | start no earlier than 2020-09-02 |
