# Terminprogramm

Schedule from MS Project, 2019-09-18 to 2021-11-08, status date 2019-10-16.
Planung / Realisierung
Aegerter & Bosshardt AG

## Calendars

- Standard: Mon-Fri 08:00-12:00, 13:00-17:00; Sat-Sun off. Exceptions (off unless hours are given): 2019-10-26 08:00-12:00, 13:00-17:00.

## Resources

| Resource |
| --- |
| TBA-H / -V |
| AeBo |
| Unt. |
| TBA-V |
| Kanton BS |
| AeBo+AUE+Eigent. |
| AUE |
| Eigent. |
| Eigentümer |
| AUE/AeBo |
| AUE, PL, U |
| SUBB |
| TBA, PL, U |
| TBA |
| TBA, PL, U-Inliner |
| U-Inliner |
| U-Baumeister |
| RR |
| TBA, PL, U-Inliner, etc. |
| PV |
| AeBo, TBA |
| Baumeister |
| Unternehmer |
| alle |
| ARGE KS |
| UN-Neubau |
| HBA, PV |
| UN |
| UN-Sanitär |
| UN-Inliner |
| HBA |
| UN-Baumeister |
| Ex team |
| Bauphase 1 |
| Bauphase 2 |
| Bauphase 3 |
| Bauphase 4 |
| Bauphase 5 |
| Bauphase 6 |
| Bauphase 7 |
| XXXXXXXXX |
| ASTRA / GE |
| ASTRA |
| PV / ASTRA |
| UUN |
| 10 |

## Schedule

| ID | WBS | Task | Type | Duration | Start | Finish | Predecessors | Total slack | Free slack | Constraint |
| --- | --- | --- | --- | --- | --- | --- | --- | --- | --- | --- |
| 1 | 1 | **Planung** |  | 360d | 2019-09-18 | 2021-02-01 |  | 10d |  |  |
| 2 | 1.1 | Startsitzung | milestone | 0d | 2019-10-16 | 2019-10-16 |  | 10d | 0d |  |
| 3 | 1.2 | Zusätzliche statische Überprüfung Limmattalbahn |  | 20d | 2019-09-18 | 2019-10-16 | 2SF | 10d |  |  |
| 4 | 1.3 | **Massnahmenprojekt** |  | 190d | 2019-10-16 | 2020-07-06 |  | 0d |  |  |
| 5 | 1.3.1 | Grundlagen Beschaffung, Prüfung MK |  | 10d | 2019-10-16 | 2019-10-28 |  | 0d |  |  |
| 6 | 1.3.2 | Aktualisierung NV und PB |  | 10d | 2019-10-29 | 2019-11-11 | 5, 2, 3 | 0d |  | start no earlier than 2019-06-26 |
| 7 | 1.3.3 | Ergänzende Abklärungen Zustand (Lager), Statik (Pfeiler), Thematik UHFB |  | 30d | 2019-11-12 | 2019-12-23 | 6 | 0d |  | start no earlier than 2019-06-26 |
| 8 | 1.3.4 | Projektierung Gerüste und technische Details |  | 30d | 2019-12-24 | 2020-02-03 | 6, 7 | 0d |  | start no earlier than 2019-06-26 |
| 9 | 1.3.5 | Abklärung mit Stadt Baden / Planung Installationen, Baustellenversorgung |  | 20d | 2019-12-24 | 2020-01-20 | 7 | 455d | 0d | start no earlier than 2019-06-26 |
| 10 | 1.3.6 | Planung Bauphasen, prov. Verkehrsführung |  | 15d | 2020-01-21 | 2020-02-10 | 9 | 455d |  |  |
| 11 | 1.3.7 | Planbearbeitung CAD |  | 20d | 2020-02-04 | 2020-03-02 | 8 | 0d |  |  |
| 12 | 1.3.8 | Erstellen Dossier MP |  | 20d | 2020-03-03 | 2020-03-30 | 11 | 0d |  |  |
| 13 | 1.3.9 | Reserve |  | 15d | 2020-03-31 | 2020-04-20 | 12 | 0d |  |  |
| 14 | 1.3.10 | Abgabe MP-Vernehmlassung | milestone | 0d | 2020-04-20 | 2020-04-20 | 13 | 0d |  |  |
| 15 | 1.3.11 | Kontrolle ATB, evtl. Dritte (Kt. Fachstellen, usw.) |  | 30d | 2020-04-21 | 2020-06-01 | 14 | 0d |  |  |
| 16 | 1.3.12 | Bereinigung |  | 10d | 2020-06-02 | 2020-06-15 | 15 | 0d |  |  |
| 17 | 1.3.13 | Abgabe MP zur Genehmigung | milestone | 0d | 2020-06-15 | 2020-06-15 | 16 | 0d |  |  |
| 18 | 1.3.14 | Genehmigungsphase |  | 15d | 2020-06-16 | 2020-07-06 | 17 | 350d | 0d |  |
| 19 | 1.3.15 | Genehmigung MP | milestone | 0d | 2020-07-06 | 2020-07-06 | 18 | 350d |  |  |
| 20 | 1.4 | **Ausschreibung** |  | 130d | 2020-06-16 | 2020-12-14 |  | 0d |  |  |
| 21 | 1.4.1 | Erarbeitung Submissionsunterlagen |  | 45d | 2020-06-16 | 2020-08-17 | 17 | 0d |  |  |
| 22 | 1.4.2 | Durchführung Submission, Offerteerarbeitung durch UN |  | 45d | 2020-08-18 | 2020-10-19 | 21 | 0d |  |  |
| 23 | 1.4.3 | Auswertung Submission, Vergabeantrag |  | 20d | 2020-10-20 | 2020-11-16 | 22 | 0d |  |  |
| 24 | 1.4.4 | Vergabe Baumeisterarbeiten | milestone | 0d | 2020-11-16 | 2020-11-16 | 23 | 0d |  |  |
| 25 | 1.4.5 | Beschwerdefrist |  | 20d | 2020-11-17 | 2020-12-14 | 24 | 0d |  |  |

| ID | WBS | Task | Type | Duration | Start | Finish | Predecessors | Total slack | Constraint |
| --- | --- | --- | --- | --- | --- | --- | --- | --- | --- |
| 26 | 1.5 | **Ausführungsprojekt** |  | 120d | 2020-08-18 | 2021-02-01 |  | 200d |  |
| 27 | 1.5.1 | Erarbeitung Unterlagen für die Ausführung |  | 120d | 2020-08-18 | 2021-02-01 | 21 | 200d |  |
| 28 | 2 | **Realisierung** |  | 205d | 2020-12-15 | 2021-09-27 |  | 0d |  |
| 29 | 2.1 | **Bauausführung** |  | 190d | 2020-12-15 | 2021-09-06 | 25 | 0d |  |
| 30 | 2.1.1 | AVOR |  | 30d | 2020-12-15 | 2021-01-25 | 25 | 0d | start no earlier than 2020-06-30 |
| 31 | 2.1.2 | Installationen, Gerüste |  | 30d | 2021-01-26 | 2021-03-08 | 30 | 0d | start no earlier than 2020-06-30 |
| 32 | 2.1.3 | Bauausführung |  | 130d | 2021-03-09 | 2021-09-06 | 31 | 0d | start no earlier than 2020-06-30 |
| 33 | 2.2 | Inbetriebnahme, Abschluss |  | 15d | 2021-09-07 | 2021-09-27 | 32 | 0d |  |
| 34 | 2.3 | Bauende | milestone | 0d | 2021-09-27 | 2021-09-27 | 33 | 0d | start no earlier than 2020-06-30 |
| 35 | 3 | Erstellung DAW/PAW |  | 30d | 2021-09-28 | 2021-11-08 | 34 | 0d |  |
